# Создание карты города

How a schedule from MS Project changed from version to version. A marks actual dates.

## Version 1 (saved 2023-03-02, file initial.mpp)

Note of the change: finish 6 files

| ID | WBS | Task | Duration | Start | Finish | Predecessors | Total float | Constraint |
| --- | --- | --- | --- | --- | --- | --- | --- | --- |
| 1 |  | Начало проекта | 0w | 2023-03-01 09:00 | 2023-03-01 09:00 |  |  |  |
| 2 | 2 | **Создание интерфейса** | 74.65d | 2023-03-01 10:00 | 2023-06-20 16:14 | 1 | 2.71d |  |
| 3 | 2.1 | **Разработка дизайна интерфейса** | 25.38d | 2023-03-01 10:00 | 2023-04-06 13:00 |  | 43.88d |  |
| 4 |  | Разработка 2D графических элементов | 3w | 2023-03-01 10:00 | 2023-03-23 11:00 |  | 43.88d |  |
| 5 |  | Разработка 3D графических элементов | 2w | 2023-03-01 10:00 | 2023-03-16 10:00 | 4SS | 43.88d |  |
| 6 |  | Создание заставки | 3w | 2023-03-16 11:00 | 2023-04-06 13:00 | 5 | 43.88d |  |
| 7 |  | Программирование интерфейса | 1.5w | 2023-06-08 11:14 | 2023-06-20 16:14 | 3, 12 | 2.71d |  |
| 8 | 3 | **Построение базы объектов** | 80.12d | 2023-03-23 12:00 | 2023-07-19 13:00 |  | 4.62d |  |
| 9 |  | Анализ и построение структуры базы объектов | 2w | 2023-03-23 12:00 | 2023-04-06 13:00 |  | 4.62d |  |
| 10 |  | Программирование средств обработки базы объектов | 2w | 2023-04-06 14:00 | 2023-04-20 13:00 | 9 | 4.62d |  |
| 11 |  | Наполнение базы объектов | 12w | 2023-04-20 14:00 | 2023-07-19 13:00 | 10 | 4.62d |  |
| 12 | 4 | **Создание ядра GIS** | 67.15d | 2023-03-01 10:00 | 2023-06-08 11:14 |  | 2.71d |  |
| 13 |  | Анализ и проектирование ядра | 3.02w | 2023-03-01 10:00 | 2023-03-23 11:00 |  | 2.71d |  |
| 14 |  | Создание модели ядра | 2.02w | 2023-03-23 11:00 | 2023-04-06 11:49 | 13 | 2.71d |  |
| 15 |  | Тестирование модели ядра | 1w | 2023-04-06 11:49 | 2023-04-13 11:49 | 14 | 2.71d |  |
| 16 |  | Создание рабочей версии ядра | 7.39w | 2023-04-13 11:49 | 2023-06-08 11:14 | 15 | 2.71d |  |
| 17 |  | Создание мультимедиа-наполнения | 6w | 2023-04-06 14:00 | 2023-05-24 11:00 | 3 | 43.88d |  |
| 18 |  | Создание справочной системы | 2w | 2023-06-30 10:14 | 2023-07-14 11:14 | 7 | 7.85d |  |
| 19 | 7 | **Создание руководства пользователя** | 17.25d | 2023-06-05 16:14 | 2023-06-30 09:14 | 7FS-10d | 2.71d |  |
| 20 |  | Разработка дизайна руководства | 1w | 2023-06-05 16:14 | 2023-06-13 17:14 |  | 2.71d |  |
| 21 |  | Написание руководства пользователя | 3w | 2023-06-07 16:14 | 2023-06-30 09:14 | 20SS+2d | 2.71d |  |
| 22 | 8 | **Создание Web-сайта и поддержка** | 23.5d | 2023-06-07 16:14 | 2023-07-12 11:14 |  | 2.71d |  |
| 23 |  | Разработка структуры сайта | 1d | 2023-06-07 16:14 | 2023-06-08 16:14 | 21SS | 2.71d |  |
| 24 |  | Разработка дизайна сайта | 1.45w | 2023-06-08 16:14 | 2023-06-21 09:14 | 23 | 2.71d |  |
| 25 |  | Наполнение сайта | 3w | 2023-06-21 09:14 | 2023-07-12 11:14 | 24 | 2.71d |  |
| 26 | 9 | **Совещание** | 100.12d | 2023-03-01 09:00 | 2023-07-26 10:00 |  | 0d |  |
| 27 |  | Совещание 1 | 1h | 2023-03-01 09:00 | 2023-03-01 10:00 |  |  | start no earlier than 2023-03-01 09:00 |
| 28 |  | Совещание 3 | 1h | 2023-03-15 09:00 | 2023-03-15 10:00 |  |  | start no earlier than 2023-03-15 09:00 |
| 29 |  | Совещание 4 | 1h | 2023-03-22 09:00 | 2023-03-22 10:00 |  |  | start no earlier than 2023-03-22 09:00 |
| 30 |  | Совещание 5 | 1h | 2023-03-29 09:00 | 2023-03-29 10:00 |  |  | start no earlier than 2023-03-29 09:00 |
| 31 |  | Совещание 6 | 1h | 2023-04-05 09:00 | 2023-04-05 10:00 |  |  | start no earlier than 2023-04-05 09:00 |
| 32 |  | Совещание 7 | 1h | 2023-04-12 09:00 | 2023-04-12 10:00 |  |  | start no earlier than 2023-04-12 09:00 |
| 33 |  | Совещание 8 | 1h | 2023-04-19 09:00 | 2023-04-19 10:00 |  |  | start no earlier than 2023-04-19 09:00 |
| 34 |  | Совещание 9 | 1h | 2023-04-26 09:00 | 2023-04-26 10:00 |  |  | start no earlier than 2023-04-26 09:00 |
| 35 |  | Совещание 10 | 1h | 2023-05-03 09:00 | 2023-05-03 10:00 |  |  | start no earlier than 2023-05-03 09:00 |
| 36 |  | Совещание 11 | 1h | 2023-05-10 09:00 | 2023-05-10 10:00 |  |  | start no earlier than 2023-05-10 09:00 |
| 37 |  | Совещание 12 | 1h | 2023-05-17 09:00 | 2023-05-17 10:00 |  |  | start no earlier than 2023-05-17 09:00 |
| 38 |  | Совещание 13 | 1h | 2023-05-24 09:00 | 2023-05-24 10:00 |  |  | start no earlier than 2023-05-24 09:00 |
| 39 |  | Совещание 14 | 1h | 2023-05-31 09:00 | 2023-05-31 10:00 |  |  | start no earlier than 2023-05-31 09:00 |
| 40 |  | Совещание 15 | 1h | 2023-06-07 09:00 | 2023-06-07 10:00 |  |  | start no earlier than 2023-06-07 09:00 |
| 41 |  | Совещание 16 | 1h | 2023-06-14 09:00 | 2023-06-14 10:00 |  |  | start no earlier than 2023-06-14 09:00 |
| 42 |  | Совещание 17 | 1h | 2023-06-21 09:00 | 2023-06-21 10:00 |  |  | start no earlier than 2023-06-21 09:00 |
| 43 |  | Совещание 18 | 1h | 2023-06-28 09:00 | 2023-06-28 10:00 |  |  | start no earlier than 2023-06-28 09:00 |
| 44 |  | Совещание 19 | 1h | 2023-07-05 09:00 | 2023-07-05 10:00 |  |  | start no earlier than 2023-07-05 09:00 |
| 45 |  | Совещание 20 | 1h | 2023-07-12 09:00 | 2023-07-12 10:00 |  |  | start no earlier than 2023-07-12 09:00 |
| 46 |  | Совещание 21 | 1h | 2023-07-19 09:00 | 2023-07-19 10:00 |  |  | start no earlier than 2023-07-19 09:00 |
| 47 |  | Совещание 22 | 1h | 2023-07-26 09:00 | 2023-07-26 10:00 |  |  | start no earlier than 2023-07-26 09:00 |
| 48 |  | Тестирование сайта | 2.43w | 2023-07-05 11:14 | 2023-07-21 12:18 | 22FS-1w | 2.71d |  |
| 49 |  | Сдача сайта в эксплуатацию | 0w | 2023-07-21 12:18 | 2023-07-21 12:18 | 48 | 2.71d |  |

## Version 2 (data date 2023-05-12, saved 2023-03-06, file lab4.mpp)

Note of the change: finish 6 files

Last finish stays 2023-07-26.

Changed:

| ID | Task | Start | Finish | Duration | Total float |
| --- | --- | --- | --- | --- | --- |
| 2 | **Создание интерфейса** |  | 2023-06-20 16:14 → 2023-06-22 14:14 (+2d) | 74.65d → 76.4d | 2.71d → 1.06d |
| 3 | **Разработка дизайна интерфейса** |  | 2023-04-06 13:00 → 2023-04-14 15:00 (+8d) | 25.38d → 31.5d | 43.88d → 37.75d |
| 5 | Разработка 3D графических элементов |  | 2023-03-16 10:00 → 2023-03-24 11:00 (+8d) |  | 43.88d → 37.75d |
| 6 | Создание заставки | 2023-03-16 11:00 → 2023-03-24 12:00 (+8d) | 2023-04-06 13:00 → 2023-04-14 15:00 (+8d) |  | 43.88d → 37.75d |
| 7 | Программирование интерфейса | 2023-06-08 11:14 → 2023-06-13 09:14 (+5d) | 2023-06-20 16:14 → 2023-06-22 14:14 (+2d) |  | 2.71d → 1.06d |
| 8 | **Построение базы объектов** | 2023-03-23 12:00 → 2023-03-27 09:00 A (+4d) | 2023-07-19 13:00 → 2023-07-21 11:00 (+2d) | 80.12d → 80.25d | 4.62d → 2.88d |
| 9 | Анализ и построение структуры базы объектов | 2023-03-23 12:00 → 2023-03-27 09:00 A (+4d) | 2023-04-06 13:00 → 2023-04-10 11:00 (+4d) |  | 4.62d → 2.88d |
| 10 | Программирование средств обработки базы объектов | 2023-04-06 14:00 → 2023-04-10 11:00 (+4d) | 2023-04-20 13:00 → 2023-04-24 11:00 (+4d) |  | 4.62d → 2.88d |
| 11 | Наполнение базы объектов | 2023-04-20 14:00 → 2023-04-24 11:00 (+4d) | 2023-07-19 13:00 → 2023-07-21 11:00 (+2d) |  | 4.62d → 2.88d |
| 12 | **Создание ядра GIS** |  | 2023-06-08 11:14 → 2023-06-13 09:14 (+5d) | 67.15d → 68.9d | 2.71d → 1.06d |
| 13 | Анализ и проектирование ядра |  |  | 3.02w → 3w | 2.71d → 1.06d |
| 16 | Создание рабочей версии ядра |  | 2023-06-08 11:14 → 2023-06-13 09:14 (+5d) | 7.39w → 7.74w | 2.71d → 1.06d |
| 17 | Создание мультимедиа-наполнения | 2023-04-06 14:00 → 2023-04-14 15:00 (+8d) | 2023-05-24 11:00 → 2023-06-01 12:00 (+8d) |  | 43.88d → 37.75d |
| 18 | Создание справочной системы | 2023-06-30 10:14 → 2023-07-04 09:14 (+4d) | 2023-07-14 11:14 → 2023-07-18 10:14 (+4d) |  | 7.85d → 5.97d |
| 19 | **Создание руководства пользователя** | 2023-06-05 16:14 → 2023-06-07 14:14 (+2d) | 2023-06-30 09:14 → 2023-07-03 17:14 (+3d) | 17.25d → 17.38d | 2.71d → 1.06d |
| 20 | Разработка дизайна руководства | 2023-06-05 16:14 → 2023-06-07 14:14 (+2d) | 2023-06-13 17:14 → 2023-06-15 14:14 (+2d) |  | 2.71d → 1.06d |
| 21 | Написание руководства пользователя | 2023-06-07 16:14 → 2023-06-09 14:14 (+2d) | 2023-06-30 09:14 → 2023-07-03 17:14 (+3d) |  | 2.71d → 1.06d |
| 22 | **Создание Web-сайта и поддержка** | 2023-06-07 16:14 → 2023-06-09 14:14 (+2d) | 2023-07-12 11:14 → 2023-07-13 17:14 (+1d) | 23.5d → 23.38d | 2.71d → 1.06d |
| 23 | Разработка структуры сайта | 2023-06-07 16:14 → 2023-06-09 14:14 (+2d) | 2023-06-08 16:14 → 2023-06-13 14:14 (+5d) |  | 2.71d → 1.06d |
| 24 | Разработка дизайна сайта | 2023-06-08 16:14 → 2023-06-13 14:14 (+5d) | 2023-06-21 09:14 → 2023-06-22 15:14 (+1d) | 1.45w → 1.43w | 2.71d → 1.06d |
| 25 | Наполнение сайта | 2023-06-21 09:14 → 2023-06-22 15:14 (+1d) | 2023-07-12 11:14 → 2023-07-13 17:14 (+1d) |  | 2.71d → 1.06d |
| 48 | Тестирование сайта | 2023-07-05 11:14 → 2023-07-06 17:14 (+1d) | 2023-07-21 12:18 → 2023-07-25 09:31 (+4d) |  | 2.71d → 1.06d |
| 49 | Сдача сайта в эксплуатацию | 2023-07-21 12:18 → 2023-07-25 09:31 (+4d) | 2023-07-21 12:18 → 2023-07-25 09:31 (+4d) |  | 2.71d → 1.06d |

## Version 3 (data date 2023-05-12, saved 2023-03-06, file 1.mpp)

Note of the change: finish 6 files

Last finish stays 2023-07-26.

Changed:

| ID | Task | Start | Finish | Duration | Total float |
| --- | --- | --- | --- | --- | --- |
| 2 | **Создание интерфейса** |  | 2023-06-22 14:14 → 2023-06-20 16:14 (-2d) | 76.4d → 74.65d | 1.06d → 2.71d |
| 7 | Программирование интерфейса | 2023-06-13 09:14 → 2023-06-08 11:14 (-5d) | 2023-06-22 14:14 → 2023-06-20 16:14 (-2d) |  | 1.06d → 2.71d |
| 8 | **Построение базы объектов** | 2023-03-27 09:00 A → 2023-03-23 12:00 (-4d) | 2023-07-21 11:00 → 2023-07-19 13:00 (-2d) | 80.25d → 80.12d | 2.88d → 4.62d |
| 9 | Анализ и построение структуры базы объектов | 2023-03-27 09:00 A → 2023-03-23 12:00 (-4d) | 2023-04-10 11:00 → 2023-04-06 13:00 (-4d) |  | 2.88d → 4.62d |
| 10 | Программирование средств обработки базы объектов | 2023-04-10 11:00 → 2023-04-06 14:00 (-4d) | 2023-04-24 11:00 → 2023-04-20 13:00 (-4d) |  | 2.88d → 4.62d |
| 11 | Наполнение базы объектов | 2023-04-24 11:00 → 2023-04-20 14:00 (-4d) | 2023-07-21 11:00 → 2023-07-19 13:00 (-2d) |  | 2.88d → 4.62d |
| 12 | **Создание ядра GIS** |  | 2023-06-13 09:14 → 2023-06-08 11:14 (-5d) | 68.9d → 67.15d | 1.06d → 2.71d |
| 13 | Анализ и проектирование ядра |  |  | 3w → 3.02w | 1.06d → 2.71d |
| 16 | Создание рабочей версии ядра |  | 2023-06-13 09:14 → 2023-06-08 11:14 (-5d) | 7.74w → 7.39w | 1.06d → 2.71d |
| 18 | Создание справочной системы | 2023-07-04 09:14 → 2023-06-30 10:14 (-4d) | 2023-07-18 10:14 → 2023-07-14 11:14 (-4d) |  | 5.97d → 7.85d |
| 19 | **Создание руководства пользователя** | 2023-06-07 14:14 → 2023-06-05 16:14 (-2d) | 2023-07-03 17:14 → 2023-06-30 09:14 (-3d) | 17.38d → 17.25d | 1.06d → 2.71d |
| 20 | Разработка дизайна руководства | 2023-06-07 14:14 → 2023-06-05 16:14 (-2d) | 2023-06-15 14:14 → 2023-06-13 17:14 (-2d) |  | 1.06d → 2.71d |
| 21 | Написание руководства пользователя | 2023-06-09 14:14 → 2023-06-07 16:14 (-2d) | 2023-07-03 17:14 → 2023-06-30 09:14 (-3d) |  | 1.06d → 2.71d |
| 22 | **Создание Web-сайта и поддержка** | 2023-06-09 14:14 → 2023-06-07 16:14 (-2d) | 2023-07-13 17:14 → 2023-07-12 11:14 (-1d) | 23.38d → 23.5d | 1.06d → 2.71d |
| 23 | Разработка структуры сайта | 2023-06-09 14:14 → 2023-06-07 16:14 (-2d) | 2023-06-13 14:14 → 2023-06-08 16:14 (-5d) |  | 1.06d → 2.71d |
| 24 | Разработка дизайна сайта | 2023-06-13 14:14 → 2023-06-08 16:14 (-5d) | 2023-06-22 15:14 → 2023-06-21 09:14 (-1d) | 1.43w → 1.45w | 1.06d → 2.71d |
| 25 | Наполнение сайта | 2023-06-22 15:14 → 2023-06-21 09:14 (-1d) | 2023-07-13 17:14 → 2023-07-12 11:14 (-1d) |  | 1.06d → 2.71d |
| 48 | Тестирование сайта | 2023-07-06 17:14 → 2023-07-05 11:14 (-1d) | 2023-07-25 09:31 → 2023-07-21 12:18 (-4d) |  | 1.06d → 2.71d |
| 49 | Сдача сайта в эксплуатацию | 2023-07-25 09:31 → 2023-07-21 12:18 (-4d) | 2023-07-25 09:31 → 2023-07-21 12:18 (-4d) |  | 1.06d → 2.71d |

## Version 4 (data date 2023-05-12, saved 2023-03-06, file 2.mpp)

Note of the change: finish 6 files

Last finish stays 2023-07-26.

Changed:

| ID | Task | Start | Finish | Duration | Total float |
| --- | --- | --- | --- | --- | --- |
| 2 | **Создание интерфейса** |  | 2023-06-20 16:14 → 2023-06-22 14:14 (+2d) | 74.65d → 76.4d | 2.71d → 1.06d |
| 7 | Программирование интерфейса | 2023-06-08 11:14 → 2023-06-13 09:14 (+5d) | 2023-06-20 16:14 → 2023-06-22 14:14 (+2d) |  | 2.71d → 1.06d |
| 8 | **Построение базы объектов** | 2023-03-23 12:00 → 2023-03-27 09:00 A (+4d) | 2023-07-19 13:00 → 2023-07-21 11:00 (+2d) | 80.12d → 80.25d | 4.62d → 2.88d |
| 9 | Анализ и построение структуры базы объектов | 2023-03-23 12:00 → 2023-03-27 09:00 A (+4d) | 2023-04-06 13:00 → 2023-04-10 11:00 (+4d) |  | 4.62d → 2.88d |
| 10 | Программирование средств обработки базы объектов | 2023-04-06 14:00 → 2023-04-10 11:00 (+4d) | 2023-04-20 13:00 → 2023-04-24 11:00 (+4d) |  | 4.62d → 2.88d |
| 11 | Наполнение базы объектов | 2023-04-20 14:00 → 2023-04-24 11:00 (+4d) | 2023-07-19 13:00 → 2023-07-21 11:00 (+2d) |  | 4.62d → 2.88d |
| 12 | **Создание ядра GIS** |  | 2023-06-08 11:14 → 2023-06-13 09:14 (+5d) | 67.15d → 68.9d | 2.71d → 1.06d |
| 13 | Анализ и проектирование ядра |  |  | 3.02w → 3w | 2.71d → 1.06d |
| 16 | Создание рабочей версии ядра |  | 2023-06-08 11:14 → 2023-06-13 09:14 (+5d) | 7.39w → 7.74w | 2.71d → 1.06d |
| 18 | Создание справочной системы | 2023-06-30 10:14 → 2023-07-04 09:14 (+4d) | 2023-07-14 11:14 → 2023-07-18 10:14 (+4d) |  | 7.85d → 5.97d |
| 19 | **Создание руководства пользователя** | 2023-06-05 16:14 → 2023-06-07 14:14 (+2d) | 2023-06-30 09:14 → 2023-07-03 17:14 (+3d) | 17.25d → 17.38d | 2.71d → 1.06d |
| 20 | Разработка дизайна руководства | 2023-06-05 16:14 → 2023-06-07 14:14 (+2d) | 2023-06-13 17:14 → 2023-06-15 14:14 (+2d) |  | 2.71d → 1.06d |
| 21 | Написание руководства пользователя | 2023-06-07 16:14 → 2023-06-09 14:14 (+2d) | 2023-06-30 09:14 → 2023-07-03 17:14 (+3d) |  | 2.71d → 1.06d |
| 22 | **Создание Web-сайта и поддержка** | 2023-06-07 16:14 → 2023-06-09 14:14 (+2d) | 2023-07-12 11:14 → 2023-07-13 17:14 (+1d) | 23.5d → 23.38d | 2.71d → 1.06d |
| 23 | Разработка структуры сайта | 2023-06-07 16:14 → 2023-06-09 14:14 (+2d) | 2023-06-08 16:14 → 2023-06-13 14:14 (+5d) |  | 2.71d → 1.06d |
| 24 | Разработка дизайна сайта | 2023-06-08 16:14 → 2023-06-13 14:14 (+5d) | 2023-06-21 09:14 → 2023-06-22 15:14 (+1d) | 1.45w → 1.43w | 2.71d → 1.06d |
| 25 | Наполнение сайта | 2023-06-21 09:14 → 2023-06-22 15:14 (+1d) | 2023-07-12 11:14 → 2023-07-13 17:14 (+1d) |  | 2.71d → 1.06d |
| 48 | Тестирование сайта | 2023-07-05 11:14 → 2023-07-06 17:14 (+1d) | 2023-07-21 12:18 → 2023-07-25 09:31 (+4d) |  | 2.71d → 1.06d |
| 49 | Сдача сайта в эксплуатацию | 2023-07-21 12:18 → 2023-07-25 09:31 (+4d) | 2023-07-21 12:18 → 2023-07-25 09:31 (+4d) |  | 2.71d → 1.06d |

## Version 5 (data date 2023-05-12, saved 2023-03-06, file 3.mpp)

Note of the change: finish 6 files

Last finish 2023-07-26 → 2023-08-01 (+6d).

Changed:

| ID | Task | Start | Finish | Duration | Total float | Other |
| --- | --- | --- | --- | --- | --- | --- |
| 2 | **Создание интерфейса** |  | 2023-06-22 14:14 → 2023-06-29 17:14 (+7d) | 76.4d → 81.78d | 1.06d → 0d |  |
| 7 | Программирование интерфейса | 2023-06-13 09:14 → 2023-06-20 12:14 (+7d) | 2023-06-22 14:14 → 2023-06-29 17:14 (+7d) |  | 1.06d → 0d |  |
| 8 | **Построение базы объектов** |  | 2023-07-21 11:00 → 2023-07-28 15:00 (+7d) | 80.25d → 85.62d | 2.88d → 1.82d |  |
| 9 | Анализ и построение структуры базы объектов |  | 2023-04-10 11:00 → 2023-04-17 15:00 (+7d) |  | 2.88d → 1.82d |  |
| 10 | Программирование средств обработки базы объектов | 2023-04-10 11:00 → 2023-04-17 15:00 (+7d) | 2023-04-24 11:00 → 2023-05-02 15:00 (+8d) |  | 2.88d → 1.82d |  |
| 11 | Наполнение базы объектов | 2023-04-24 11:00 → 2023-05-02 15:00 (+8d) | 2023-07-21 11:00 → 2023-07-28 15:00 (+7d) |  | 2.88d → 1.82d |  |
| 12 | **Создание ядра GIS** |  | 2023-06-13 09:14 → 2023-06-20 12:14 (+7d) | 68.9d → 74.28d | 1.06d → 0d |  |
| 13 | Анализ и проектирование ядра |  | 2023-03-23 11:00 → 2023-04-03 12:00 (+11d) | 3w → 4.4w | 1.06d → 0d |  |
| 14 | Создание модели ядра | 2023-03-23 11:00 → 2023-04-03 12:00 (+11d) | 2023-04-06 11:49 → 2023-04-17 12:47 (+11d) |  | 1.06d → 0d |  |
| 15 | Тестирование модели ядра | 2023-04-06 11:49 → 2023-04-17 12:47 (+11d) | 2023-04-13 11:49 → 2023-04-24 12:47 (+11d) |  | 1.06d → 0d |  |
| 16 | Создание рабочей версии ядра | 2023-04-13 11:49 → 2023-04-24 12:47 (+11d) | 2023-06-13 09:14 → 2023-06-20 12:14 (+7d) | 7.74w → 7.39w | 1.06d → 0d |  |
| 18 | Создание справочной системы | 2023-07-04 09:14 → 2023-07-11 11:14 (+7d) | 2023-07-18 10:14 → 2023-07-25 12:14 (+7d) |  | 5.97d → 5.04d |  |
| 19 | **Создание руководства пользователя** | 2023-06-07 14:14 → 2023-06-15 17:14 (+8d) | 2023-07-03 17:14 → 2023-07-11 10:14 (+8d) | 17.38d → 17.25d | 1.06d → 0d |  |
| 20 | Разработка дизайна руководства | 2023-06-07 14:14 → 2023-06-15 17:14 (+8d) | 2023-06-15 14:14 → 2023-06-22 17:14 (+7d) |  | 1.06d → 0d |  |
| 21 | Написание руководства пользователя | 2023-06-09 14:14 → 2023-06-19 17:14 (+10d) | 2023-07-03 17:14 → 2023-07-11 10:14 (+8d) |  | 1.06d → 0d |  |
| 22 | **Создание Web-сайта и поддержка** | 2023-06-09 14:14 → 2023-06-19 17:14 (+10d) | 2023-07-13 17:14 → 2023-07-21 11:14 (+8d) |  | 1.06d → 0d |  |
| 23 | Разработка структуры сайта | 2023-06-09 14:14 → 2023-06-19 17:14 (+10d) | 2023-06-13 14:14 → 2023-06-20 17:14 (+7d) |  | 1.06d → 0d |  |
| 24 | Разработка дизайна сайта | 2023-06-13 14:14 → 2023-06-20 17:14 (+7d) | 2023-06-22 15:14 → 2023-06-30 09:14 (+8d) |  | 1.06d → 0d |  |
| 25 | Наполнение сайта | 2023-06-22 15:14 → 2023-06-30 09:14 (+8d) | 2023-07-13 17:14 → 2023-07-21 11:14 (+8d) |  | 1.06d → 0d |  |
| 28 | Совещание 3 |  |  |  |  | resources 3D аниматор; Web-дизайнер; Ведущий программист; Мультимедиа- корреспондент; Системный аналитик; Технический писатель; Художник- дизайнер → 3D аниматор; Web-дизайнер; Ведущий программист; Мультимедиа- корреспондент; Технический писатель; Художник- дизайнер |
| 48 | Тестирование сайта | 2023-07-06 17:14 → 2023-07-14 11:14 (+8d) | 2023-07-25 09:31 → 2023-08-01 12:31 (+7d) |  | 1.06d → 0d |  |
| 49 | Сдача сайта в эксплуатацию | 2023-07-25 09:31 → 2023-08-01 12:31 (+7d) | 2023-07-25 09:31 → 2023-08-01 12:31 (+7d) |  | 1.06d → 0d |  |

## Version 6 (data date 2023-05-12, saved 2023-03-06, file 4.mpp)

Note of the change: finish 6 files

Last finish stays 2023-08-01.

Changed:

| ID | Task | Other |
| --- | --- | --- |
| 8 | **Построение базы объектов** | resources Сервер → Сервер; Собственный сервер |

## Version 7 (data date 2023-05-12, saved 2023-03-06, file 5.mpp)

Note of the change: finish 6 files

Last finish stays 2023-08-01.

Changed:

| ID | Task | Duration | Other |
| --- | --- | --- | --- |
| 17 | Создание мультимедиа-наполнения | 6w → 10.75w | resources Мультимедиа- корреспондент → Мультимедиа- корреспондент; Специализированное ПО |

## Version 8 (data date 2023-05-12, saved 2023-03-06, file 6.mpp)

Note of the change: finish 6 files

Last finish 2023-08-01 → 2023-08-18 (+17d).

Changed:

| ID | Task | Start | Finish | Duration | Total float | Other |
| --- | --- | --- | --- | --- | --- | --- |
| 2 | **Создание интерфейса** |  | 2023-06-29 17:14 → 2023-07-13 16:18 (+14d) | 81.78d → 91.66d |  |  |
| 7 | Программирование интерфейса | 2023-06-20 12:14 → 2023-07-04 11:18 (+14d) | 2023-06-29 17:14 → 2023-07-13 16:18 (+14d) | 1.5w → 1.66w |  |  |
| 8 | **Построение базы объектов** |  | 2023-07-28 15:00 → 2023-08-01 17:36 (+4d) | 85.62d → 87.95d | 1.82d → 12.35d |  |
| 10 | Программирование средств обработки базы объектов | 2023-04-17 15:00 → 2023-04-19 17:36 (+2d) | 2023-05-02 15:00 → 2023-05-04 17:36 (+2d) |  | 1.82d → 12.35d |  |
| 11 | Наполнение базы объектов | 2023-05-02 15:00 → 2023-05-04 17:36 (+2d) | 2023-07-28 15:00 → 2023-08-01 17:36 (+4d) |  | 1.82d → 12.35d |  |
| 12 | **Создание ядра GIS** |  | 2023-06-20 12:14 → 2023-07-04 11:18 (+14d) | 74.28d → 84.16d |  |  |
| 14 | Создание модели ядра |  | 2023-04-17 12:47 → 2023-04-19 17:36 (+2d) | 2.02w → 2.57w |  | resources Ведущий программист; Программист №1; Программист №2; Программист №3; программист №4 → Программист №1; Программист №2; Программист №3; программист №4 |
| 15 | Тестирование модели ядра | 2023-04-17 12:47 → 2023-04-19 17:36 (+2d) | 2023-04-24 12:47 → 2023-04-26 11:36 (+2d) |  |  |  |
| 16 | Создание рабочей версии ядра | 2023-04-24 12:47 → 2023-04-26 12:36 (+2d) | 2023-06-20 12:14 → 2023-07-04 11:18 (+14d) | 7.39w → 10.34w |  | resources Ведущий программист; Программист №1; Программист №2; Программист №3; программист №4 → Программист №1; Программист №2; Программист №3; программист №4 |
| 18 | Создание справочной системы | 2023-07-11 11:14 → 2023-07-25 10:18 (+14d) | 2023-07-25 12:14 → 2023-08-08 10:18 (+14d) |  | 5.04d → 8.14d |  |
| 19 | **Создание руководства пользователя** | 2023-06-15 17:14 → 2023-06-29 16:18 (+14d) | 2023-07-11 10:14 → 2023-07-25 09:18 (+14d) |  |  |  |
| 20 | Разработка дизайна руководства | 2023-06-15 17:14 → 2023-06-29 16:18 (+14d) | 2023-06-22 17:14 → 2023-07-06 16:18 (+14d) |  |  |  |
| 21 | Написание руководства пользователя | 2023-06-19 17:14 → 2023-07-03 16:18 (+14d) | 2023-07-11 10:14 → 2023-07-25 09:18 (+14d) |  |  |  |
| 22 | **Создание Web-сайта и поддержка** | 2023-06-19 17:14 → 2023-07-03 16:18 (+14d) | 2023-07-21 11:14 → 2023-08-04 10:18 (+14d) |  |  |  |
| 23 | Разработка структуры сайта | 2023-06-19 17:14 → 2023-07-03 16:18 (+14d) | 2023-06-20 17:14 → 2023-07-04 16:18 (+14d) |  |  |  |
| 24 | Разработка дизайна сайта | 2023-06-20 17:14 → 2023-07-04 16:18 (+14d) | 2023-06-30 09:14 → 2023-07-13 17:18 (+13d) |  |  |  |
| 25 | Наполнение сайта | 2023-06-30 09:14 → 2023-07-13 17:18 (+13d) | 2023-07-21 11:14 → 2023-08-04 10:18 (+14d) |  |  |  |
| 33 | Совещание 8 |  |  |  |  | resources 3D аниматор; Web-дизайнер; Ведущий программист; Мультимедиа- корреспондент; Системный аналитик; Технический писатель; Художник- дизайнер → 3D аниматор; Web-дизайнер; Мультимедиа- корреспондент; Системный аналитик; Технический писатель; Художник- дизайнер; Программист №1 |
| 34 | Совещание 9 |  |  |  |  | resources 3D аниматор; Web-дизайнер; Ведущий программист; Мультимедиа- корреспондент; Системный аналитик; Технический писатель; Художник- дизайнер → 3D аниматор; Web-дизайнер; Мультимедиа- корреспондент; Системный аналитик; Технический писатель; Художник- дизайнер; Программист №1 |
| 35 | Совещание 10 |  |  |  |  | resources 3D аниматор; Web-дизайнер; Ведущий программист; Мультимедиа- корреспондент; Системный аналитик; Технический писатель; Художник- дизайнер → 3D аниматор; Web-дизайнер; Мультимедиа- корреспондент; Системный аналитик; Технический писатель; Художник- дизайнер; Программист №1 |
| 36 | Совещание 11 |  |  |  |  | resources 3D аниматор; Web-дизайнер; Ведущий программист; Мультимедиа- корреспондент; Системный аналитик; Технический писатель; Художник- дизайнер → 3D аниматор; Web-дизайнер; Мультимедиа- корреспондент; Системный аналитик; Технический писатель; Художник- дизайнер; Программист №1 |
| 37 | Совещание 12 |  |  |  |  | resources 3D аниматор; Web-дизайнер; Ведущий программист; Мультимедиа- корреспондент; Системный аналитик; Технический писатель; Художник- дизайнер → 3D аниматор; Web-дизайнер; Мультимедиа- корреспондент; Системный аналитик; Технический писатель; Художник- дизайнер; Программист №1 |
| 38 | Совещание 13 |  |  |  |  | resources 3D аниматор; Web-дизайнер; Ведущий программист; Мультимедиа- корреспондент; Системный аналитик; Технический писатель; Художник- дизайнер → 3D аниматор; Web-дизайнер; Мультимедиа- корреспондент; Системный аналитик; Технический писатель; Художник- дизайнер; Программист №1 |
| 39 | Совещание 14 |  |  |  |  | resources 3D аниматор; Web-дизайнер; Ведущий программист; Мультимедиа- корреспондент; Системный аналитик; Технический писатель; Художник- дизайнер → 3D аниматор; Web-дизайнер; Мультимедиа- корреспондент; Системный аналитик; Технический писатель; Художник- дизайнер; Программист №1 |
| 40 | Совещание 15 |  |  |  |  | resources 3D аниматор; Web-дизайнер; Ведущий программист; Мультимедиа- корреспондент; Системный аналитик; Технический писатель; Художник- дизайнер → 3D аниматор; Web-дизайнер; Мультимедиа- корреспондент; Системный аналитик; Технический писатель; Художник- дизайнер; Программист №1 |
| 41 | Совещание 16 |  |  |  |  | resources 3D аниматор; Web-дизайнер; Ведущий программист; Мультимедиа- корреспондент; Системный аналитик; Технический писатель; Художник- дизайнер → 3D аниматор; Web-дизайнер; Мультимедиа- корреспондент; Системный аналитик; Технический писатель; Художник- дизайнер; Программист №1 |
| 42 | Совещание 17 |  |  |  |  | resources 3D аниматор; Web-дизайнер; Ведущий программист; Мультимедиа- корреспондент; Системный аналитик; Технический писатель; Художник- дизайнер → 3D аниматор; Web-дизайнер; Мультимедиа- корреспондент; Системный аналитик; Технический писатель; Художник- дизайнер; Программист №1 |
| 43 | Совещание 18 |  |  |  |  | resources 3D аниматор; Web-дизайнер; Ведущий программист; Мультимедиа- корреспондент; Системный аналитик; Технический писатель; Художник- дизайнер → 3D аниматор; Web-дизайнер; Мультимедиа- корреспондент; Системный аналитик; Технический писатель; Художник- дизайнер; Программист №1 |
| 44 | Совещание 19 |  |  |  |  | resources 3D аниматор; Web-дизайнер; Ведущий программист; Мультимедиа- корреспондент; Системный аналитик; Технический писатель; Художник- дизайнер → 3D аниматор; Web-дизайнер; Мультимедиа- корреспондент; Системный аналитик; Технический писатель; Художник- дизайнер; Программист №1 |
| 45 | Совещание 20 |  |  |  |  | resources 3D аниматор; Web-дизайнер; Ведущий программист; Мультимедиа- корреспондент; Системный аналитик; Технический писатель; Художник- дизайнер → 3D аниматор; Web-дизайнер; Мультимедиа- корреспондент; Системный аналитик; Технический писатель; Художник- дизайнер; Программист №1 |
| 46 | Совещание 21 |  |  |  |  | resources 3D аниматор; Web-дизайнер; Ведущий программист; Мультимедиа- корреспондент; Системный аналитик; Технический писатель; Художник- дизайнер → 3D аниматор; Web-дизайнер; Мультимедиа- корреспондент; Системный аналитик; Технический писатель; Художник- дизайнер; Программист №1 |
| 47 | Совещание 22 |  |  |  |  | resources 3D аниматор; Web-дизайнер; Ведущий программист; Мультимедиа- корреспондент; Системный аналитик; Технический писатель; Художник- дизайнер → 3D аниматор; Web-дизайнер; Мультимедиа- корреспондент; Системный аналитик; Технический писатель; Художник- дизайнер; Программист №1 |
| 48 | Тестирование сайта | 2023-07-14 11:14 → 2023-07-28 10:18 (+14d) | 2023-08-01 12:31 → 2023-08-18 11:24 (+17d) | 2.43w → 3.35w |  | resources Ведущий программист; Программист №1; Программист №2; Программист №3; программист №4 → Программист №1; Программист №2; Программист №3; программист №4 |
| 49 | Сдача сайта в эксплуатацию | 2023-08-01 12:31 → 2023-08-18 11:24 (+17d) | 2023-08-01 12:31 → 2023-08-18 11:24 (+17d) |  |  |  |

## Version 9 (data date 2023-05-12, saved 2023-03-06, file 7_mark.mpp)

Note of the change: finish 4

Last finish stays 2023-08-18. Complete tasks 0 → 19.

Changed:

| ID | Task | Start | Finish | Complete | Total float |
| --- | --- | --- | --- | --- | --- |
| 1 | Начало проекта | 2023-03-01 09:00 A | 2023-03-01 09:00 A | 0% → 100% |  |
| 2 | **Создание интерфейса** | 2023-03-01 10:00 A |  | 0% → 83% |  |
| 3 | **Разработка дизайна интерфейса** | 2023-03-01 10:00 A | 2023-04-14 15:00 A | 0% → 100% | 52.66d → none |
| 4 | Разработка 2D графических элементов | 2023-03-01 10:00 A | 2023-03-23 11:00 A | 0% → 100% | 52.75d → none |
| 5 | Разработка 3D графических элементов | 2023-03-01 10:00 A | 2023-03-24 11:00 A | 0% → 100% | 52.75d → none |
| 6 | Создание заставки | 2023-03-24 12:00 A | 2023-04-14 15:00 A | 0% → 100% | 52.66d → none |
| 8 | **Построение базы объектов** |  |  | 0% → 30% |  |
| 9 | Анализ и построение структуры базы объектов |  | 2023-04-17 15:00 A | 0% → 100% | 13.38d → none |
| 10 | Программирование средств обработки базы объектов | 2023-04-19 17:36 A | 2023-05-04 17:36 A | 0% → 100% | 12.35d → none |
| 11 | Наполнение базы объектов | 2023-05-04 17:36 A |  | 0% → 7% |  |
| 12 | **Создание ядра GIS** | 2023-03-01 10:00 A |  | 0% → 59% |  |
| 13 | Анализ и проектирование ядра | 2023-03-01 10:00 A | 2023-04-03 12:00 A | 0% → 100% | 0d → none |
| 14 | Создание модели ядра | 2023-04-03 12:00 A | 2023-04-19 17:36 A | 0% → 100% | 0d → none |
| 15 | Тестирование модели ядра | 2023-04-19 17:36 A | 2023-04-26 11:36 A | 0% → 100% | 0d → none |
| 16 | Создание рабочей версии ядра | 2023-04-26 12:36 A |  | 0% → 27% |  |
| 17 | Создание мультимедиа-наполнения | 2023-04-14 15:00 A |  | 0% → 76% |  |
| 26 | **Совещание** | 2023-03-01 09:00 A |  | 0% → 48% |  |
| 27 | Совещание 1 | 2023-03-01 09:00 A | 2023-03-01 10:00 A | 0% → 100% |  |
| 28 | Совещание 3 | 2023-03-15 09:00 A | 2023-03-15 10:00 A | 0% → 100% |  |
| 29 | Совещание 4 | 2023-03-22 09:00 A | 2023-03-22 10:00 A | 0% → 100% |  |
| 30 | Совещание 5 | 2023-03-29 09:00 A | 2023-03-29 10:00 A | 0% → 100% |  |
| 31 | Совещание 6 | 2023-04-05 09:00 A | 2023-04-05 10:00 A | 0% → 100% |  |
| 32 | Совещание 7 | 2023-04-12 09:00 A | 2023-04-12 10:00 A | 0% → 100% |  |
| 33 | Совещание 8 | 2023-04-19 09:00 A | 2023-04-19 10:00 A | 0% → 100% |  |
| 34 | Совещание 9 | 2023-04-26 09:00 A | 2023-04-26 10:00 A | 0% → 100% |  |
| 35 | Совещание 10 | 2023-05-03 09:00 A | 2023-05-03 10:00 A | 0% → 100% |  |
| 36 | Совещание 11 | 2023-05-10 09:00 A | 2023-05-10 10:00 A | 0% → 100% |  |

## Version 10 (data date 2023-05-12, saved 2023-03-07, file 8_opt.mpp)

Note of the change: finish 4

Last finish 2023-08-18 → 2023-08-04 (-14d).

Changed:

| ID | Task | Start | Finish | Duration | Complete | Total float | Other |
| --- | --- | --- | --- | --- | --- | --- | --- |
| 2 | **Создание интерфейса** |  | 2023-07-13 16:18 → 2023-07-03 17:47 (-10d) | 91.66d → 83.85d |  |  |  |
| 7 | Программирование интерфейса | 2023-07-04 11:18 → 2023-06-22 12:47 (-12d) | 2023-07-13 16:18 → 2023-07-03 17:47 (-10d) | 1.66w → 1.68w |  |  |  |
| 12 | **Создание ядра GIS** |  | 2023-07-04 11:18 → 2023-06-22 12:47 (-12d) | 84.16d → 76.35d | 59% → 65% |  |  |
| 16 | Создание рабочей версии ядра |  | 2023-07-04 11:18 → 2023-06-22 12:47 (-12d) | 10.34w → 8.68w | 27% → 32% |  | resources Программист №1; Программист №2; Программист №3; программист №4 → Программист №1; Программист №2; Программист №3; программист №4; программист №5 |
| 18 | Создание справочной системы | 2023-07-25 10:18 → 2023-07-13 11:47 (-12d) | 2023-08-08 10:18 → 2023-07-27 12:47 (-12d) |  |  | 8.14d → 6.1d |  |
| 19 | **Создание руководства пользователя** | 2023-06-29 16:18 → 2023-06-19 17:47 (-10d) | 2023-07-25 09:18 → 2023-07-13 10:47 (-12d) |  |  |  |  |
| 20 | Разработка дизайна руководства | 2023-06-29 16:18 → 2023-06-19 17:47 (-10d) | 2023-07-06 16:18 → 2023-06-27 09:47 (-9d) |  |  |  |  |
| 21 | Написание руководства пользователя | 2023-07-03 16:18 → 2023-06-21 17:47 (-12d) | 2023-07-25 09:18 → 2023-07-13 10:47 (-12d) |  |  |  |  |
| 22 | **Создание Web-сайта и поддержка** | 2023-07-03 16:18 → 2023-06-21 17:47 (-12d) | 2023-08-04 10:18 → 2023-07-25 12:47 (-10d) | 23.38d → 23.5d |  |  |  |
| 23 | Разработка структуры сайта | 2023-07-03 16:18 → 2023-06-21 17:47 (-12d) | 2023-07-04 16:18 → 2023-06-22 17:47 (-12d) |  |  |  |  |
| 24 | Разработка дизайна сайта | 2023-07-04 16:18 → 2023-06-22 17:47 (-12d) | 2023-07-13 17:18 → 2023-07-04 10:47 (-9d) | 1.43w → 1.45w |  |  |  |
| 25 | Наполнение сайта | 2023-07-13 17:18 → 2023-07-04 10:47 (-9d) | 2023-08-04 10:18 → 2023-07-25 12:47 (-10d) |  |  |  |  |
| 48 | Тестирование сайта | 2023-07-28 10:18 → 2023-07-18 12:47 (-10d) | 2023-08-18 11:24 → 2023-08-04 14:36 (-14d) | 3.35w → 2.87w |  |  | resources Программист №1; Программист №2; Программист №3; программист №4 → Программист №1; Программист №2; Программист №3; программист №4; программист №5 |
| 49 | Сдача сайта в эксплуатацию | 2023-08-18 11:24 → 2023-08-04 14:36 (-14d) | 2023-08-18 11:24 → 2023-08-04 14:36 (-14d) |  |  |  |  |
