# Создание карты города

How a schedule from MS Project changed from version to version. A marks actual dates.

## Version 1 (saved 2023-02-28, file lab2_res.mpp)

Note of the change: finish 5

| ID | WBS | Task | Duration | Start | Finish | Predecessors | Total float |
| --- | --- | --- | --- | --- | --- | --- | --- |
| 1 |  | Начало проекта | 0w | 2023-03-01 | 2023-03-01 |  |  |
| 2 | 2 | **Создание интерфейса** | 110d | 2023-03-01 | 2023-08-08 | 1 | 0d |
| 3 | 2.1 | **Разработка дизайна интерфейса** | 25d | 2023-03-01 | 2023-04-05 |  | 70d |
| 4 |  | Разработка 2D графических элементов | 3w | 2023-03-01 | 2023-03-22 |  | 70d |
| 5 |  | Разработка 3D графических элементов | 2w | 2023-03-01 | 2023-03-15 | 4SS | 70d |
| 6 |  | Создание заставки | 3w | 2023-03-16 | 2023-04-05 | 5 | 70d |
| 7 |  | Программирование интерфейса | 3w | 2023-07-19 | 2023-08-08 | 3, 12 | 0d |
| 8 | 3 | **Построение базы объектов** | 85d | 2023-03-01 | 2023-07-04 |  | 53d |
| 9 |  | Анализ и построение структуры базы объектов | 2w | 2023-03-01 | 2023-03-15 |  | 53d |
| 10 |  | Программирование средств обработки базы объектов | 3w | 2023-03-16 | 2023-04-05 | 9 | 53d |
| 11 |  | Наполнение базы объектов | 12w | 2023-04-06 | 2023-07-04 | 10 | 53d |
| 12 | 4 | **Создание ядра GIS** | 95d | 2023-03-01 | 2023-07-18 |  | 0d |
| 13 |  | Анализ и проектирование ядра | 3w | 2023-03-01 | 2023-03-22 |  | 0d |
| 14 |  | Создание модели ядра | 5w | 2023-03-23 | 2023-04-26 | 13 | 0d |
| 15 |  | Тестирование модели ядра | 1w | 2023-04-27 | 2023-05-04 | 14 | 0d |
| 16 |  | Создание рабочей версии ядра | 10w | 2023-05-05 | 2023-07-18 | 15 | 0d |
| 17 |  | Создание мультимедиа-наполнения | 6w | 2023-04-06 | 2023-05-22 | 3 | 83d |
| 18 |  | Создание справочной системы | 2w | 2023-08-09 | 2023-08-22 | 7 | 18d |
| 19 | 7 | **Создание руководства пользователя** | 17d | 2023-07-26 | 2023-08-17 | 7FS-10d | 0d |
| 20 |  | Разработка дизайна руководства | 1w | 2023-07-26 | 2023-08-01 |  | 0d |
| 21 |  | Написание руководства пользователя | 3w | 2023-07-28 | 2023-08-17 | 20SS+2d | 0d |
| 22 | 8 | **Создание Web-сайта и поддержка** | 21d | 2023-07-28 | 2023-08-25 |  | 0d |
| 23 |  | Разработка структуры сайта | 1d | 2023-07-28 | 2023-07-28 | 21SS | 0d |
| 24 |  | Разработка дизайна сайта | 1w | 2023-07-31 | 2023-08-04 | 23 | 0d |
| 25 |  | Наполнение сайта | 3w | 2023-08-07 | 2023-08-25 | 24 | 0d |
| 26 |  | Тестирование сайта | 4w | 2023-08-21 | 2023-09-15 | 22FS-1w | 0d |
| 27 |  | Сдача сайта в эксплуатацию | 0w | 2023-09-15 | 2023-09-15 | 26 | 0d |

## Version 2 (data date 2023-05-12, saved 2023-03-07, file 1.mpp)

Note of the change: doing 5

Last finish 2023-09-15 → 2023-08-04 (-42d). Complete tasks 0 → 19.

Added:

| ID | Task | Duration | Start | Finish | Constraint | Resources |
| --- | --- | --- | --- | --- | --- | --- |
| 26 | **Совещание** | 100.12d | 2023-03-01 09:00 A | 2023-07-26 10:00 |  |  |
| 27 | Совещание 1 | 1h | 2023-03-01 09:00 A | 2023-03-01 10:00 A | start no earlier than 2023-03-01 09:00 | 3D аниматор; Web-дизайнер; Ведущий программист; Мультимедиа- корреспондент; Системный аналитик; Технический писатель; Художник- дизайнер |
| 28 | Совещание 3 | 1h | 2023-03-15 09:00 A | 2023-03-15 10:00 A | start no earlier than 2023-03-15 09:00 | 3D аниматор; Web-дизайнер; Ведущий программист; Мультимедиа- корреспондент; Технический писатель; Художник- дизайнер |
| 29 | Совещание 4 | 1h | 2023-03-22 09:00 A | 2023-03-22 10:00 A | start no earlier than 2023-03-22 09:00 | 3D аниматор; Web-дизайнер; Ведущий программист; Мультимедиа- корреспондент; Системный аналитик; Технический писатель; Художник- дизайнер |
| 30 | Совещание 5 | 1h | 2023-03-29 09:00 A | 2023-03-29 10:00 A | start no earlier than 2023-03-29 09:00 | 3D аниматор; Web-дизайнер; Ведущий программист; Мультимедиа- корреспондент; Системный аналитик; Технический писатель; Художник- дизайнер |
| 31 | Совещание 6 | 1h | 2023-04-05 09:00 A | 2023-04-05 10:00 A | start no earlier than 2023-04-05 09:00 | 3D аниматор; Web-дизайнер; Ведущий программист; Мультимедиа- корреспондент; Системный аналитик; Технический писатель; Художник- дизайнер |
| 32 | Совещание 7 | 1h | 2023-04-12 09:00 A | 2023-04-12 10:00 A | start no earlier than 2023-04-12 09:00 | 3D аниматор; Web-дизайнер; Ведущий программист; Мультимедиа- корреспондент; Системный аналитик; Технический писатель; Художник- дизайнер |
| 33 | Совещание 8 | 1h | 2023-04-19 09:00 A | 2023-04-19 10:00 A | start no earlier than 2023-04-19 09:00 | 3D аниматор; Web-дизайнер; Мультимедиа- корреспондент; Системный аналитик; Технический писатель; Художник- дизайнер; Программист №1 |
| 34 | Совещание 9 | 1h | 2023-04-26 09:00 A | 2023-04-26 10:00 A | start no earlier than 2023-04-26 09:00 | 3D аниматор; Web-дизайнер; Мультимедиа- корреспондент; Системный аналитик; Технический писатель; Художник- дизайнер; Программист №1 |
| 35 | Совещание 10 | 1h | 2023-05-03 09:00 A | 2023-05-03 10:00 A | start no earlier than 2023-05-03 09:00 | 3D аниматор; Web-дизайнер; Мультимедиа- корреспондент; Системный аналитик; Технический писатель; Художник- дизайнер; Программист №1 |
| 36 | Совещание 11 | 1h | 2023-05-10 09:00 A | 2023-05-10 10:00 A | start no earlier than 2023-05-10 09:00 | 3D аниматор; Web-дизайнер; Мультимедиа- корреспондент; Системный аналитик; Технический писатель; Художник- дизайнер; Программист №1 |
| 37 | Совещание 12 | 1h | 2023-05-17 09:00 | 2023-05-17 10:00 | start no earlier than 2023-05-17 09:00 | 3D аниматор; Web-дизайнер; Мультимедиа- корреспондент; Системный аналитик; Технический писатель; Художник- дизайнер; Программист №1 |
| 38 | Совещание 13 | 1h | 2023-05-24 09:00 | 2023-05-24 10:00 | start no earlier than 2023-05-24 09:00 | 3D аниматор; Web-дизайнер; Мультимедиа- корреспондент; Системный аналитик; Технический писатель; Художник- дизайнер; Программист №1 |
| 39 | Совещание 14 | 1h | 2023-05-31 09:00 | 2023-05-31 10:00 | start no earlier than 2023-05-31 09:00 | 3D аниматор; Web-дизайнер; Мультимедиа- корреспондент; Системный аналитик; Технический писатель; Художник- дизайнер; Программист №1 |
| 40 | Совещание 15 | 1h | 2023-06-07 09:00 | 2023-06-07 10:00 | start no earlier than 2023-06-07 09:00 | 3D аниматор; Web-дизайнер; Мультимедиа- корреспондент; Системный аналитик; Технический писатель; Художник- дизайнер; Программист №1 |
| 41 | Совещание 16 | 1h | 2023-06-14 09:00 | 2023-06-14 10:00 | start no earlier than 2023-06-14 09:00 | 3D аниматор; Web-дизайнер; Мультимедиа- корреспондент; Системный аналитик; Технический писатель; Художник- дизайнер; Программист №1 |
| 42 | Совещание 17 | 1h | 2023-06-21 09:00 | 2023-06-21 10:00 | start no earlier than 2023-06-21 09:00 | 3D аниматор; Web-дизайнер; Мультимедиа- корреспондент; Системный аналитик; Технический писатель; Художник- дизайнер; Программист №1 |
| 43 | Совещание 18 | 1h | 2023-06-28 09:00 | 2023-06-28 10:00 | start no earlier than 2023-06-28 09:00 | 3D аниматор; Web-дизайнер; Мультимедиа- корреспондент; Системный аналитик; Технический писатель; Художник- дизайнер; Программист №1 |
| 44 | Совещание 19 | 1h | 2023-07-05 09:00 | 2023-07-05 10:00 | start no earlier than 2023-07-05 09:00 | 3D аниматор; Web-дизайнер; Мультимедиа- корреспондент; Системный аналитик; Технический писатель; Художник- дизайнер; Программист №1 |
| 45 | Совещание 20 | 1h | 2023-07-12 09:00 | 2023-07-12 10:00 | start no earlier than 2023-07-12 09:00 | 3D аниматор; Web-дизайнер; Мультимедиа- корреспондент; Системный аналитик; Технический писатель; Художник- дизайнер; Программист №1 |
| 46 | Совещание 21 | 1h | 2023-07-19 09:00 | 2023-07-19 10:00 | start no earlier than 2023-07-19 09:00 | 3D аниматор; Web-дизайнер; Мультимедиа- корреспондент; Системный аналитик; Технический писатель; Художник- дизайнер; Программист №1 |
| 47 | Совещание 22 | 1h | 2023-07-26 09:00 | 2023-07-26 10:00 | start no earlier than 2023-07-26 09:00 | 3D аниматор; Web-дизайнер; Мультимедиа- корреспондент; Системный аналитик; Технический писатель; Художник- дизайнер; Программист №1 |

Changed:

| ID | Task | Start | Finish | Duration | Complete | Total float | Other |
| --- | --- | --- | --- | --- | --- | --- | --- |
| 1 | Начало проекта | 2023-03-01 → 2023-03-01 09:00 A | 2023-03-01 → 2023-03-01 09:00 A |  | 0% → 100% |  | baseline start none → 2023-03-01 09:00; baseline finish none → 2023-03-01 09:00 |
| 2 | **Создание интерфейса** | 2023-03-01 → 2023-03-01 10:00 A | 2023-08-08 → 2023-07-03 17:47 (-36d) | 110d → 83.85d | 0% → 83% |  | baseline start none → 2023-03-01 10:00; baseline finish none → 2023-06-20 16:14 |
| 3 | **Разработка дизайна интерфейса** | 2023-03-01 → 2023-03-01 10:00 A | 2023-04-05 → 2023-04-14 15:00 A (+9d) | 25d → 31.5d | 0% → 100% | 70d → none | baseline start none → 2023-03-01 10:00; baseline finish none → 2023-04-06 13:00 |
| 4 | Разработка 2D графических элементов | 2023-03-01 → 2023-03-01 10:00 A | 2023-03-22 → 2023-03-23 11:00 A (+1d) |  | 0% → 100% | 70d → none | baseline start none → 2023-03-01 10:00; baseline finish none → 2023-03-23 11:00 |
| 5 | Разработка 3D графических элементов | 2023-03-01 → 2023-03-01 10:00 A | 2023-03-15 → 2023-03-24 11:00 A (+9d) |  | 0% → 100% | 70d → none | baseline start none → 2023-03-01 10:00; baseline finish none → 2023-03-16 10:00 |
| 6 | Создание заставки | 2023-03-16 → 2023-03-24 12:00 A (+8d) | 2023-04-05 → 2023-04-14 15:00 A (+9d) |  | 0% → 100% | 70d → none | baseline start none → 2023-03-16 11:00; baseline finish none → 2023-04-06 13:00 |
| 7 | Программирование интерфейса | 2023-07-19 → 2023-06-22 12:47 (-27d) | 2023-08-08 → 2023-07-03 17:47 (-36d) | 3w → 1.68w |  |  | resources Программист №3; программист №4 → Программист №3; программист №4; Программист №1; Программист №2; baseline start none → 2023-06-08 11:14; baseline finish none → 2023-06-20 16:14 |
| 8 | **Построение базы объектов** | 2023-03-01 → 2023-03-27 09:00 A (+26d) | 2023-07-04 → 2023-08-01 17:36 (+28d) | 85d → 87.95d | 0% → 30% | 53d → 2.62d | resources Сервер → Сервер; Собственный сервер; baseline start none → 2023-03-23 12:00; baseline finish none → 2023-07-19 13:00 |
| 9 | Анализ и построение структуры базы объектов | 2023-03-01 → 2023-03-27 09:00 A (+26d) | 2023-03-15 → 2023-04-17 15:00 A (+33d) |  | 0% → 100% | 53d → none | baseline start none → 2023-03-23 12:00; baseline finish none → 2023-04-06 13:00 |
| 10 | Программирование средств обработки базы объектов | 2023-03-16 → 2023-04-19 17:36 A (+34d) | 2023-04-05 → 2023-05-04 17:36 A (+29d) | 3w → 2w | 0% → 100% | 53d → none | resources Программист №3; программист №4 → Программист №3; программист №4; Программист №2; baseline start none → 2023-04-06 14:00; baseline finish none → 2023-04-20 13:00 |
| 11 | Наполнение базы объектов | 2023-04-06 → 2023-05-04 17:36 A (+28d) | 2023-07-04 → 2023-08-01 17:36 (+28d) |  | 0% → 7% | 53d → 2.62d | baseline start none → 2023-04-20 14:00; baseline finish none → 2023-07-19 13:00 |
| 12 | **Создание ядра GIS** | 2023-03-01 → 2023-03-01 10:00 A | 2023-07-18 → 2023-06-22 12:47 (-26d) | 95d → 76.35d | 0% → 65% |  | baseline start none → 2023-03-01 10:00; baseline finish none → 2023-06-08 11:14 |
| 13 | Анализ и проектирование ядра | 2023-03-01 → 2023-03-01 10:00 A | 2023-03-22 → 2023-04-03 12:00 A (+12d) | 3w → 4.4w | 0% → 100% | 0d → none | baseline start none → 2023-03-01 10:00; baseline finish none → 2023-03-23 11:00 |
| 14 | Создание модели ядра | 2023-03-23 → 2023-04-03 12:00 A (+11d) | 2023-04-26 → 2023-04-19 17:36 A (-7d) | 5w → 2.57w | 0% → 100% | 0d → none | resources Ведущий программист; Программист №1 → Программист №1; Программист №2; Программист №3; программист №4; baseline start none → 2023-03-23 11:00; baseline finish none → 2023-04-06 11:49 |
| 15 | Тестирование модели ядра | 2023-04-27 → 2023-04-19 17:36 A (-8d) | 2023-05-04 → 2023-04-26 11:36 A (-8d) |  | 0% → 100% | 0d → none | baseline start none → 2023-04-06 11:49; baseline finish none → 2023-04-13 11:49 |
| 16 | Создание рабочей версии ядра | 2023-05-05 → 2023-04-26 12:36 A (-9d) | 2023-07-18 → 2023-06-22 12:47 (-26d) | 10w → 8.68w | 0% → 32% |  | resources Ведущий программист; Программист №1; Программист №2 → Программист №1; Программист №2; Программист №3; программист №4; программист №5; baseline start none → 2023-04-13 11:49; baseline finish none → 2023-06-08 11:14 |
| 17 | Создание мультимедиа-наполнения | 2023-04-06 → 2023-04-14 15:00 A (+8d) | 2023-05-22 → 2023-06-01 12:00 (+10d) | 6w → 10.75w | 0% → 76% | 83d → 45.2d | resources Мультимедиа- корреспондент → Мультимедиа- корреспондент; Специализированное ПО; baseline start none → 2023-04-06 14:00; baseline finish none → 2023-05-24 11:00 |
| 18 | Создание справочной системы | 2023-08-09 → 2023-07-13 11:47 (-27d) | 2023-08-22 → 2023-07-27 12:47 (-26d) |  |  | 18d → 6.1d | baseline start none → 2023-06-30 10:14; baseline finish none → 2023-07-14 11:14 |
| 19 | **Создание руководства пользователя** | 2023-07-26 → 2023-06-19 17:47 (-37d) | 2023-08-17 → 2023-07-13 10:47 (-35d) | 17d → 17.25d |  |  | baseline start none → 2023-06-05 16:14; baseline finish none → 2023-06-30 09:14 |
| 20 | Разработка дизайна руководства | 2023-07-26 → 2023-06-19 17:47 (-37d) | 2023-08-01 → 2023-06-27 09:47 (-35d) |  |  |  | baseline start none → 2023-06-05 16:14; baseline finish none → 2023-06-13 17:14 |
| 21 | Написание руководства пользователя | 2023-07-28 → 2023-06-21 17:47 (-37d) | 2023-08-17 → 2023-07-13 10:47 (-35d) |  |  |  | baseline start none → 2023-06-07 16:14; baseline finish none → 2023-06-30 09:14 |
| 22 | **Создание Web-сайта и поддержка** | 2023-07-28 → 2023-06-21 17:47 (-37d) | 2023-08-25 → 2023-07-25 12:47 (-31d) | 21d → 23.5d |  |  | baseline start none → 2023-06-07 16:14; baseline finish none → 2023-07-12 11:14 |
| 23 | Разработка структуры сайта | 2023-07-28 → 2023-06-21 17:47 (-37d) | 2023-07-28 → 2023-06-22 17:47 (-36d) |  |  |  | baseline start none → 2023-06-07 16:14; baseline finish none → 2023-06-08 16:14 |
| 24 | Разработка дизайна сайта | 2023-07-31 → 2023-06-22 17:47 (-39d) | 2023-08-04 → 2023-07-04 10:47 (-31d) | 1w → 1.45w |  |  | baseline start none → 2023-06-08 16:14; baseline finish none → 2023-06-21 09:14 |
| 25 | Наполнение сайта | 2023-08-07 → 2023-07-04 10:47 (-34d) | 2023-08-25 → 2023-07-25 12:47 (-31d) |  |  |  | baseline start none → 2023-06-21 09:14; baseline finish none → 2023-07-12 11:14 |
| 48 | Тестирование сайта | 2023-08-21 → 2023-07-18 12:47 (-34d) | 2023-09-15 → 2023-08-04 14:36 (-42d) | 4w → 2.87w |  |  | resources Ведущий программист; Программист №1; Программист №2 → Программист №1; Программист №2; Программист №3; программист №4; программист №5; baseline start none → 2023-07-05 11:14; baseline finish none → 2023-07-21 12:18 |
| 49 | Сдача сайта в эксплуатацию | 2023-09-15 → 2023-08-04 14:36 (-42d) | 2023-09-15 → 2023-08-04 14:36 (-42d) |  |  |  | baseline start none → 2023-07-21 12:18; baseline finish none → 2023-07-21 12:18 |

## Version 3 (saved 2023-03-12, file start.mpp)

Note of the change: finish 5

Last finish 2023-08-04 → 2023-09-15 (+42d). Complete tasks 19 → 0.

Added:

| ID | Task | Duration | Start | Finish | Constraint | Resources |
| --- | --- | --- | --- | --- | --- | --- |
| 48 | Совещание 23 | 1h | 2023-08-02 09:00 | 2023-08-02 10:00 | start no earlier than 2023-08-02 09:00 | 3D аниматор; Web-дизайнер; Ведущий программист; Мультимедиа- корреспондент; Системный аналитик; Технический писатель; Художник- дизайнер |
| 49 | Совещание 24 | 1h | 2023-08-09 09:00 | 2023-08-09 10:00 | start no earlier than 2023-08-09 09:00 | 3D аниматор; Web-дизайнер; Ведущий программист; Мультимедиа- корреспондент; Системный аналитик; Технический писатель; Художник- дизайнер |
| 50 | Совещание 25 | 1h | 2023-08-16 09:00 | 2023-08-16 10:00 | start no earlier than 2023-08-16 09:00 | 3D аниматор; Web-дизайнер; Ведущий программист; Мультимедиа- корреспондент; Системный аналитик; Технический писатель; Художник- дизайнер |
| 51 | Совещание 26 | 1h | 2023-08-23 09:00 | 2023-08-23 10:00 | start no earlier than 2023-08-23 09:00 | 3D аниматор; Web-дизайнер; Ведущий программист; Мультимедиа- корреспондент; Системный аналитик; Технический писатель; Художник- дизайнер |
| 52 | Совещание 27 | 1h | 2023-08-30 09:00 | 2023-08-30 10:00 | start no earlier than 2023-08-30 09:00 | 3D аниматор; Web-дизайнер; Ведущий программист; Мультимедиа- корреспондент; Системный аналитик; Технический писатель; Художник- дизайнер |
| 53 | Совещание 28 | 1h | 2023-09-06 09:00 | 2023-09-06 10:00 | start no earlier than 2023-09-06 09:00 | 3D аниматор; Web-дизайнер; Ведущий программист; Мультимедиа- корреспондент; Системный аналитик; Технический писатель; Художник- дизайнер |
| 54 | Совещание 29 | 1h | 2023-09-13 09:00 | 2023-09-13 10:00 | start no earlier than 2023-09-13 09:00 | 3D аниматор; Web-дизайнер; Ведущий программист; Мультимедиа- корреспондент; Системный аналитик; Технический писатель; Художник- дизайнер |

Changed:

| ID | Task | Start | Finish | Duration | Complete | Total float | Other |
| --- | --- | --- | --- | --- | --- | --- | --- |
| 1 | Начало проекта | 2023-03-01 09:00 A → 2023-03-01 09:00 | 2023-03-01 09:00 A → 2023-03-01 09:00 |  | 100% → 0% |  | baseline start 2023-03-01 09:00 → none; baseline finish 2023-03-01 09:00 → none |
| 2 | **Создание интерфейса** | 2023-03-01 10:00 A → 2023-03-01 09:00 | 2023-07-03 17:47 → 2023-08-08 18:00 (+36d) | 83.85d → 110d | 83% → 0% |  | baseline start 2023-03-01 10:00 → none; baseline finish 2023-06-20 16:14 → none |
| 3 | **Разработка дизайна интерфейса** | 2023-03-01 10:00 A → 2023-03-01 09:00 | 2023-04-14 15:00 A → 2023-04-05 18:00 (-9d) | 31.5d → 25d | 100% → 0% | none → 70d | baseline start 2023-03-01 10:00 → none; baseline finish 2023-04-06 13:00 → none |
| 4 | Разработка 2D графических элементов | 2023-03-01 10:00 A → 2023-03-01 09:00 | 2023-03-23 11:00 A → 2023-03-22 18:00 (-1d) |  | 100% → 0% | none → 70d | baseline start 2023-03-01 10:00 → none; baseline finish 2023-03-23 11:00 → none |
| 5 | Разработка 3D графических элементов | 2023-03-01 10:00 A → 2023-03-01 09:00 | 2023-03-24 11:00 A → 2023-03-15 18:00 (-9d) |  | 100% → 0% | none → 70d | baseline start 2023-03-01 10:00 → none; baseline finish 2023-03-16 10:00 → none |
| 6 | Создание заставки | 2023-03-24 12:00 A → 2023-03-16 09:00 (-8d) | 2023-04-14 15:00 A → 2023-04-05 18:00 (-9d) |  | 100% → 0% | none → 70d | baseline start 2023-03-16 11:00 → none; baseline finish 2023-04-06 13:00 → none |
| 7 | Программирование интерфейса | 2023-06-22 12:47 → 2023-07-19 09:00 (+27d) | 2023-07-03 17:47 → 2023-08-08 18:00 (+36d) | 1.68w → 3w |  |  | resources Программист №3; программист №4; Программист №1; Программист №2 → Программист №3; программист №4; baseline start 2023-06-08 11:14 → none; baseline finish 2023-06-20 16:14 → none |
| 8 | **Построение базы объектов** | 2023-03-27 09:00 A → 2023-03-01 09:00 (-26d) | 2023-08-01 17:36 → 2023-07-04 18:00 (-28d) | 87.95d → 85d | 30% → 0% | 2.62d → 53d | resources Сервер; Собственный сервер → Сервер; baseline start 2023-03-23 12:00 → none; baseline finish 2023-07-19 13:00 → none |
| 9 | Анализ и построение структуры базы объектов | 2023-03-27 09:00 A → 2023-03-01 09:00 (-26d) | 2023-04-17 15:00 A → 2023-03-15 18:00 (-33d) |  | 100% → 0% | none → 53d | baseline start 2023-03-23 12:00 → none; baseline finish 2023-04-06 13:00 → none |
| 10 | Программирование средств обработки базы объектов | 2023-04-19 17:36 A → 2023-03-16 09:00 (-34d) | 2023-05-04 17:36 A → 2023-04-05 18:00 (-29d) | 2w → 3w | 100% → 0% | none → 53d | resources Программист №3; программист №4; Программист №2 → Программист №3; программист №4; baseline start 2023-04-06 14:00 → none; baseline finish 2023-04-20 13:00 → none |
| 11 | Наполнение базы объектов | 2023-05-04 17:36 A → 2023-04-06 09:00 (-28d) | 2023-08-01 17:36 → 2023-07-04 18:00 (-28d) |  | 7% → 0% | 2.62d → 53d | baseline start 2023-04-20 14:00 → none; baseline finish 2023-07-19 13:00 → none |
| 12 | **Создание ядра GIS** | 2023-03-01 10:00 A → 2023-03-01 09:00 | 2023-06-22 12:47 → 2023-07-18 18:00 (+26d) | 76.35d → 95d | 65% → 0% |  | baseline start 2023-03-01 10:00 → none; baseline finish 2023-06-08 11:14 → none |
| 13 | Анализ и проектирование ядра | 2023-03-01 10:00 A → 2023-03-01 09:00 | 2023-04-03 12:00 A → 2023-03-22 18:00 (-12d) | 4.4w → 3w | 100% → 0% | none → 0d | baseline start 2023-03-01 10:00 → none; baseline finish 2023-03-23 11:00 → none |
| 14 | Создание модели ядра | 2023-04-03 12:00 A → 2023-03-23 09:00 (-11d) | 2023-04-19 17:36 A → 2023-04-26 18:00 (+7d) | 2.57w → 5w | 100% → 0% | none → 0d | resources Программист №1; Программист №2; Программист №3; программист №4 → Ведущий программист; Программист №1; baseline start 2023-03-23 11:00 → none; baseline finish 2023-04-06 11:49 → none |
| 15 | Тестирование модели ядра | 2023-04-19 17:36 A → 2023-04-27 09:00 (+8d) | 2023-04-26 11:36 A → 2023-05-04 18:00 (+8d) |  | 100% → 0% | none → 0d | baseline start 2023-04-06 11:49 → none; baseline finish 2023-04-13 11:49 → none |
| 16 | Создание рабочей версии ядра | 2023-04-26 12:36 A → 2023-05-05 09:00 (+9d) | 2023-06-22 12:47 → 2023-07-18 18:00 (+26d) | 8.68w → 10w | 32% → 0% |  | resources Программист №1; Программист №2; Программист №3; программист №4; программист №5 → Ведущий программист; Программист №1; Программист №2; baseline start 2023-04-13 11:49 → none; baseline finish 2023-06-08 11:14 → none |
| 17 | Создание мультимедиа-наполнения | 2023-04-14 15:00 A → 2023-04-06 09:00 (-8d) | 2023-06-01 12:00 → 2023-05-22 18:00 (-10d) | 10.75w → 6w | 76% → 0% | 45.2d → 83d | resources Мультимедиа- корреспондент; Специализированное ПО → Мультимедиа- корреспондент; baseline start 2023-04-06 14:00 → none; baseline finish 2023-05-24 11:00 → none |
| 18 | Создание справочной системы | 2023-07-13 11:47 → 2023-08-09 09:00 (+27d) | 2023-07-27 12:47 → 2023-08-22 18:00 (+26d) |  |  | 6.1d → 18d | baseline start 2023-06-30 10:14 → none; baseline finish 2023-07-14 11:14 → none |
| 19 | **Создание руководства пользователя** | 2023-06-19 17:47 → 2023-07-26 09:00 (+37d) | 2023-07-13 10:47 → 2023-08-17 18:00 (+35d) | 17.25d → 17d |  |  | baseline start 2023-06-05 16:14 → none; baseline finish 2023-06-30 09:14 → none |
| 20 | Разработка дизайна руководства | 2023-06-19 17:47 → 2023-07-26 09:00 (+37d) | 2023-06-27 09:47 → 2023-08-01 18:00 (+35d) |  |  |  | baseline start 2023-06-05 16:14 → none; baseline finish 2023-06-13 17:14 → none |
| 21 | Написание руководства пользователя | 2023-06-21 17:47 → 2023-07-28 09:00 (+37d) | 2023-07-13 10:47 → 2023-08-17 18:00 (+35d) |  |  |  | baseline start 2023-06-07 16:14 → none; baseline finish 2023-06-30 09:14 → none |
| 22 | **Создание Web-сайта и поддержка** | 2023-06-21 17:47 → 2023-07-28 09:00 (+37d) | 2023-07-25 12:47 → 2023-08-25 18:00 (+31d) | 23.5d → 21d |  |  | baseline start 2023-06-07 16:14 → none; baseline finish 2023-07-12 11:14 → none |
| 23 | Разработка структуры сайта | 2023-06-21 17:47 → 2023-07-28 09:00 (+37d) | 2023-06-22 17:47 → 2023-07-28 18:00 (+36d) |  |  |  | baseline start 2023-06-07 16:14 → none; baseline finish 2023-06-08 16:14 → none |
| 24 | Разработка дизайна сайта | 2023-06-22 17:47 → 2023-07-31 09:00 (+39d) | 2023-07-04 10:47 → 2023-08-04 18:00 (+31d) | 1.45w → 1w |  |  | baseline start 2023-06-08 16:14 → none; baseline finish 2023-06-21 09:14 → none |
| 25 | Наполнение сайта | 2023-07-04 10:47 → 2023-08-07 09:00 (+34d) | 2023-07-25 12:47 → 2023-08-25 18:00 (+31d) |  |  |  | baseline start 2023-06-21 09:14 → none; baseline finish 2023-07-12 11:14 → none |
| 26 | **Совещание** | 2023-03-01 09:00 A → 2023-03-01 09:00 | 2023-07-26 10:00 → 2023-09-13 10:00 (+49d) | 100.12d → 135.12d | 48% → 0% |  | baseline start 2023-03-01 09:00 → none; baseline finish 2023-07-26 10:00 → none |
| 27 | Совещание 1 | 2023-03-01 09:00 A → 2023-03-01 09:00 | 2023-03-01 10:00 A → 2023-03-01 10:00 |  | 100% → 0% |  | baseline start 2023-03-01 09:00 → none; baseline finish 2023-03-01 10:00 → none |
| 28 | Совещание 3 | 2023-03-15 09:00 A → 2023-03-15 09:00 | 2023-03-15 10:00 A → 2023-03-15 10:00 |  | 100% → 0% |  | resources 3D аниматор; Web-дизайнер; Ведущий программист; Мультимедиа- корреспондент; Технический писатель; Художник- дизайнер → 3D аниматор; Web-дизайнер; Ведущий программист; Мультимедиа- корреспондент; Системный аналитик; Технический писатель; Художник- дизайнер; baseline start 2023-03-15 09:00 → none; baseline finish 2023-03-15 10:00 → none |
| 29 | Совещание 4 | 2023-03-22 09:00 A → 2023-03-22 09:00 | 2023-03-22 10:00 A → 2023-03-22 10:00 |  | 100% → 0% |  | baseline start 2023-03-22 09:00 → none; baseline finish 2023-03-22 10:00 → none |
| 30 | Совещание 5 | 2023-03-29 09:00 A → 2023-03-29 09:00 | 2023-03-29 10:00 A → 2023-03-29 10:00 |  | 100% → 0% |  | baseline start 2023-03-29 09:00 → none; baseline finish 2023-03-29 10:00 → none |
| 31 | Совещание 6 | 2023-04-05 09:00 A → 2023-04-05 09:00 | 2023-04-05 10:00 A → 2023-04-05 10:00 |  | 100% → 0% |  | baseline start 2023-04-05 09:00 → none; baseline finish 2023-04-05 10:00 → none |
| 32 | Совещание 7 | 2023-04-12 09:00 A → 2023-04-12 09:00 | 2023-04-12 10:00 A → 2023-04-12 10:00 |  | 100% → 0% |  | baseline start 2023-04-12 09:00 → none; baseline finish 2023-04-12 10:00 → none |
| 33 | Совещание 8 | 2023-04-19 09:00 A → 2023-04-19 09:00 | 2023-04-19 10:00 A → 2023-04-19 10:00 |  | 100% → 0% |  | resources 3D аниматор; Web-дизайнер; Мультимедиа- корреспондент; Системный аналитик; Технический писатель; Художник- дизайнер; Программист №1 → 3D аниматор; Web-дизайнер; Ведущий программист; Мультимедиа- корреспондент; Системный аналитик; Технический писатель; Художник- дизайнер; baseline start 2023-04-19 09:00 → none; baseline finish 2023-04-19 10:00 → none |
| 34 | Совещание 9 | 2023-04-26 09:00 A → 2023-04-26 09:00 | 2023-04-26 10:00 A → 2023-04-26 10:00 |  | 100% → 0% |  | resources 3D аниматор; Web-дизайнер; Мультимедиа- корреспондент; Системный аналитик; Технический писатель; Художник- дизайнер; Программист №1 → 3D аниматор; Web-дизайнер; Ведущий программист; Мультимедиа- корреспондент; Системный аналитик; Технический писатель; Художник- дизайнер; baseline start 2023-04-26 09:00 → none; baseline finish 2023-04-26 10:00 → none |
| 35 | Совещание 10 | 2023-05-03 09:00 A → 2023-05-03 09:00 | 2023-05-03 10:00 A → 2023-05-03 10:00 |  | 100% → 0% |  | resources 3D аниматор; Web-дизайнер; Мультимедиа- корреспондент; Системный аналитик; Технический писатель; Художник- дизайнер; Программист №1 → 3D аниматор; Web-дизайнер; Ведущий программист; Мультимедиа- корреспондент; Системный аналитик; Технический писатель; Художник- дизайнер; baseline start 2023-05-03 09:00 → none; baseline finish 2023-05-03 10:00 → none |
| 36 | Совещание 11 | 2023-05-10 09:00 A → 2023-05-10 09:00 | 2023-05-10 10:00 A → 2023-05-10 10:00 |  | 100% → 0% |  | resources 3D аниматор; Web-дизайнер; Мультимедиа- корреспондент; Системный аналитик; Технический писатель; Художник- дизайнер; Программист №1 → 3D аниматор; Web-дизайнер; Ведущий программист; Мультимедиа- корреспондент; Системный аналитик; Технический писатель; Художник- дизайнер; baseline start 2023-05-10 09:00 → none; baseline finish 2023-05-10 10:00 → none |
| 37 | Совещание 12 |  |  |  |  |  | resources 3D аниматор; Web-дизайнер; Мультимедиа- корреспондент; Системный аналитик; Технический писатель; Художник- дизайнер; Программист №1 → 3D аниматор; Web-дизайнер; Ведущий программист; Мультимедиа- корреспондент; Системный аналитик; Технический писатель; Художник- дизайнер; baseline start 2023-05-17 09:00 → none; baseline finish 2023-05-17 10:00 → none |
| 38 | Совещание 13 |  |  |  |  |  | resources 3D аниматор; Web-дизайнер; Мультимедиа- корреспондент; Системный аналитик; Технический писатель; Художник- дизайнер; Программист №1 → 3D аниматор; Web-дизайнер; Ведущий программист; Мультимедиа- корреспондент; Системный аналитик; Технический писатель; Художник- дизайнер; baseline start 2023-05-24 09:00 → none; baseline finish 2023-05-24 10:00 → none |
| 39 | Совещание 14 |  |  |  |  |  | resources 3D аниматор; Web-дизайнер; Мультимедиа- корреспондент; Системный аналитик; Технический писатель; Художник- дизайнер; Программист №1 → 3D аниматор; Web-дизайнер; Ведущий программист; Мультимедиа- корреспондент; Системный аналитик; Технический писатель; Художник- дизайнер; baseline start 2023-05-31 09:00 → none; baseline finish 2023-05-31 10:00 → none |
| 40 | Совещание 15 |  |  |  |  |  | resources 3D аниматор; Web-дизайнер; Мультимедиа- корреспондент; Системный аналитик; Технический писатель; Художник- дизайнер; Программист №1 → 3D аниматор; Web-дизайнер; Ведущий программист; Мультимедиа- корреспондент; Системный аналитик; Технический писатель; Художник- дизайнер; baseline start 2023-06-07 09:00 → none; baseline finish 2023-06-07 10:00 → none |
| 41 | Совещание 16 |  |  |  |  |  | resources 3D аниматор; Web-дизайнер; Мультимедиа- корреспондент; Системный аналитик; Технический писатель; Художник- дизайнер; Программист №1 → 3D аниматор; Web-дизайнер; Ведущий программист; Мультимедиа- корреспондент; Системный аналитик; Технический писатель; Художник- дизайнер; baseline start 2023-06-14 09:00 → none; baseline finish 2023-06-14 10:00 → none |
| 42 | Совещание 17 |  |  |  |  |  | resources 3D аниматор; Web-дизайнер; Мультимедиа- корреспондент; Системный аналитик; Технический писатель; Художник- дизайнер; Программист №1 → 3D аниматор; Web-дизайнер; Ведущий программист; Мультимедиа- корреспондент; Системный аналитик; Технический писатель; Художник- дизайнер; baseline start 2023-06-21 09:00 → none; baseline finish 2023-06-21 10:00 → none |
| 43 | Совещание 18 |  |  |  |  |  | resources 3D аниматор; Web-дизайнер; Мультимедиа- корреспондент; Системный аналитик; Технический писатель; Художник- дизайнер; Программист №1 → 3D аниматор; Web-дизайнер; Ведущий программист; Мультимедиа- корреспондент; Системный аналитик; Технический писатель; Художник- дизайнер; baseline start 2023-06-28 09:00 → none; baseline finish 2023-06-28 10:00 → none |
| 44 | Совещание 19 |  |  |  |  |  | resources 3D аниматор; Web-дизайнер; Мультимедиа- корреспондент; Системный аналитик; Технический писатель; Художник- дизайнер; Программист №1 → 3D аниматор; Web-дизайнер; Ведущий программист; Мультимедиа- корреспондент; Системный аналитик; Технический писатель; Художник- дизайнер; baseline start 2023-07-05 09:00 → none; baseline finish 2023-07-05 10:00 → none |
| 45 | Совещание 20 |  |  |  |  |  | resources 3D аниматор; Web-дизайнер; Мультимедиа- корреспондент; Системный аналитик; Технический писатель; Художник- дизайнер; Программист №1 → 3D аниматор; Web-дизайнер; Ведущий программист; Мультимедиа- корреспондент; Системный аналитик; Технический писатель; Художник- дизайнер; baseline start 2023-07-12 09:00 → none; baseline finish 2023-07-12 10:00 → none |
| 46 | Совещание 21 |  |  |  |  |  | resources 3D аниматор; Web-дизайнер; Мультимедиа- корреспондент; Системный аналитик; Технический писатель; Художник- дизайнер; Программист №1 → 3D аниматор; Web-дизайнер; Ведущий программист; Мультимедиа- корреспондент; Системный аналитик; Технический писатель; Художник- дизайнер; baseline start 2023-07-19 09:00 → none; baseline finish 2023-07-19 10:00 → none |
| 47 | Совещание 22 |  |  |  |  |  | resources 3D аниматор; Web-дизайнер; Мультимедиа- корреспондент; Системный аналитик; Технический писатель; Художник- дизайнер; Программист №1 → 3D аниматор; Web-дизайнер; Ведущий программист; Мультимедиа- корреспондент; Системный аналитик; Технический писатель; Художник- дизайнер; baseline start 2023-07-26 09:00 → none; baseline finish 2023-07-26 10:00 → none |
| 55 | Тестирование сайта | 2023-07-18 12:47 → 2023-08-21 09:00 (+34d) | 2023-08-04 14:36 → 2023-09-15 18:00 (+42d) | 2.87w → 4w |  |  | resources Программист №1; Программист №2; Программист №3; программист №4; программист №5 → Ведущий программист; Программист №1; Программист №2; baseline start 2023-07-05 11:14 → none; baseline finish 2023-07-21 12:18 → none |
| 56 | Сдача сайта в эксплуатацию | 2023-08-04 14:36 → 2023-09-15 18:00 (+42d) | 2023-08-04 14:36 → 2023-09-15 18:00 (+42d) |  |  |  | baseline start 2023-07-21 12:18 → none; baseline finish 2023-07-21 12:18 → none |

## Version 4 (saved 2023-03-12, file lab5_real3.mpp)

Note of the change: finish 5

Last finish 2023-09-15 → 2023-08-30 (-16d).

Added:

| ID | Task | Duration | Start | Finish | Predecessors | Resources |
| --- | --- | --- | --- | --- | --- | --- |
| 2 | Анализ требований | 1w | 2023-03-01 09:00 | 2023-03-07 18:00 | 1 | 3D аниматор; Web-дизайнер; Ведущий программист; Мультимедиа- корреспондент; Системный аналитик; Технический писатель; Художник- дизайнер |
| 3 | **Проектирование** | 25d | 2023-03-07 18:00 | 2023-04-12 18:00 | 2 |  |
| 9 | 13.Анализ и проектирование ядра | 3w | 2023-03-09 09:00 | 2023-03-29 18:00 |  | Ведущий программист; Системный аналитик |
| 10 | 14.Создание модели ядра | 5w | 2023-03-09 09:00 | 2023-04-12 18:00 |  | Ведущий программист; Программист №1 |
| 11 | 20. Разработка дизайна руководства | 1w | 2023-03-09 09:00 | 2023-03-15 18:00 |  | Художник- дизайнер |
| 12 | 23. Разработка структуры сайта | 1d | 2023-03-09 09:00 | 2023-03-09 18:00 |  | Web-дизайнер |
| 13 | 24. Разработка дизайна сайта | 1w | 2023-03-09 09:00 | 2023-03-15 18:00 |  | 3D аниматор; Web-дизайнер; Художник- дизайнер |
| 14 | **Кодирование** | 75d | 2023-04-12 18:00 | 2023-08-01 18:00 | 3 |  |
| 18 | 16.Создание рабочей версии ядра | 10w | 2023-04-13 09:00 | 2023-06-27 18:00 |  | Ведущий программист; Программист №1; Программист №2 |
| 19 | 17.Создание мультимедиа-наполнения | 6w | 2023-04-13 09:00 | 2023-05-29 18:00 |  | Мультимедиа- корреспондент |
| 20 | 18. Создание справочной системы | 2w | 2023-07-19 09:00 | 2023-08-01 18:00 | 15 | Технический писатель |
| 21 | 21. Написание руководства пользователя | 3w | 2023-04-13 09:00 | 2023-05-04 18:00 |  | Технический писатель |
| 22 | 25. Наполнение сайта | 3w | 2023-04-13 09:00 | 2023-05-04 18:00 |  | Web-дизайнер |
| 23 | **Тестирование** | 20d | 2023-08-02 09:00 | 2023-08-29 18:00 | 14 |  |
| 24 | 15.Тестирование модели ядра | 1w | 2023-08-02 09:00 | 2023-08-08 18:00 |  | Программист №1 |

Removed: 2 Создание интерфейса; 8 Построение базы объектов; 12 Создание ядра GIS; 13 Анализ и проектирование ядра; 14 Создание модели ядра; 15 Тестирование модели ядра; 16 Создание рабочей версии ядра; 17 Создание мультимедиа-наполнения; 18 Создание справочной системы; 19 Создание руководства пользователя; 20 Разработка дизайна руководства; 21 Написание руководства пользователя; 22 Создание Web-сайта и поддержка; 23 Разработка структуры сайта; 24 Разработка дизайна сайта; 25 Наполнение сайта; 53 Совещание 28; 54 Совещание 29

Changed:

| ID | Task | Start | Finish | Duration | Total float | Predecessors | Other |
| --- | --- | --- | --- | --- | --- | --- | --- |
| 1 | 1. Начало проекта |  |  |  |  |  | was named Начало проекта |
| 4 | **3. Разработка дизайна интерфейса** | 2023-03-01 09:00 → 2023-03-09 09:00 (+8d) | 2023-04-05 18:00 → 2023-04-12 18:00 (+7d) |  | 70d → 0.12d |  | was named Разработка дизайна интерфейса |
| 5 | 4. Разработка 2D графических элементов | 2023-03-01 09:00 → 2023-03-09 09:00 (+8d) | 2023-03-22 18:00 → 2023-03-29 18:00 (+7d) |  | 70d → 0.12d |  | was named Разработка 2D графических элементов |
| 6 | 5. Разработка 3D графических элементов | 2023-03-01 09:00 → 2023-03-09 09:00 (+8d) | 2023-03-15 18:00 → 2023-03-22 18:00 (+7d) |  | 70d → 0.12d |  | was named Разработка 3D графических элементов |
| 7 | 6.Создание заставки | 2023-03-16 09:00 → 2023-03-23 09:00 (+7d) | 2023-04-05 18:00 → 2023-04-12 18:00 (+7d) |  | 70d → 0.12d |  | was named Создание заставки |
| 8 | 9.Анализ и построение структуры базы объектов | 2023-03-01 09:00 → 2023-03-07 18:00 (+6d) | 2023-03-15 18:00 → 2023-03-13 18:00 (-2d) | 2w → 2.2w | 53d → 22d |  | was named Анализ и построение структуры базы объектов; resources Системный аналитик → Системный аналитик; Сервер |
| 15 | 7. Программирование интерфейса | 2023-07-19 09:00 → 2023-06-28 09:00 (-21d) | 2023-08-08 18:00 → 2023-07-18 18:00 (-21d) |  | 0d → 0.12d | 4, Создание ядра GIS → 18 | was named Программирование интерфейса |
| 16 | 10.Программирование средств обработки базы объектов | 2023-03-16 09:00 → 2023-04-12 18:00 (+27d) | 2023-04-05 18:00 → 2023-05-02 18:00 (+27d) | 3w → 5w | 53d → 48.12d | 8 → none | was named Программирование средств обработки базы объектов; resources Программист №3; программист №4 → Программист №3; программист №4; Сервер |
| 17 | 11.Наполнение базы объектов | 2023-04-06 09:00 → 2023-05-02 18:00 (+26d) | 2023-07-04 18:00 → 2023-05-22 18:00 (-43d) |  | 53d → 48.12d |  | was named Наполнение базы объектов; resources Наборщик данных №1; Наборщик данных №2; Наборщик данных №3; Наборщик данных №4; Наборщик данных №5 → Наборщик данных №1; Наборщик данных №2; Наборщик данных №3; Наборщик данных №4; Наборщик данных №5; Сервер |
| 25 | 26. Тестирование сайта | 2023-08-21 09:00 → 2023-08-02 09:00 (-19d) | 2023-09-15 18:00 → 2023-08-29 18:00 (-17d) |  | 0d → 0.12d | Создание Web-сайта и поддержкаFS-1w → none | was named Тестирование сайта |
| 26 | **Совещание** |  | 2023-09-13 10:00 → 2023-08-30 10:00 (-14d) | 135.12d → 125.12d |  |  |  |
| 53 | 27.Сдача сайта в эксплуатацию | 2023-09-15 18:00 → 2023-08-29 18:00 (-17d) | 2023-09-15 18:00 → 2023-08-29 18:00 (-17d) |  | 0d → 0.12d | 25 → 23 | was named Сдача сайта в эксплуатацию |

## Version 5 (saved 2023-03-12, file lab5_real3_start_optimizing.mpp)

Note of the change: finish 5

Last finish 2023-08-30 → 2023-09-29 (+30d).

Changed:

| ID | Task | Start | Finish | Duration | Total float |
| --- | --- | --- | --- | --- | --- |
| 2 | Анализ требований | 2023-03-01 09:00 → 2023-03-01 10:00 | 2023-03-07 18:00 → 2023-03-09 10:00 (+2d) |  | 0.12d → 4.88d |
| 3 | **Проектирование** | 2023-03-07 18:00 → 2023-03-09 10:00 (+2d) | 2023-04-12 18:00 → 2023-05-10 11:00 (+28d) | 25d → 41.12d | 0.12d → 4.88d |
| 4 | **3. Разработка дизайна интерфейса** | 2023-03-09 09:00 → 2023-03-09 10:00 | 2023-04-12 18:00 → 2023-04-20 17:00 (+8d) | 25d → 30.75d | 0.12d → 15.25d |
| 5 | 4. Разработка 2D графических элементов | 2023-03-09 09:00 → 2023-03-09 10:00 | 2023-03-29 18:00 → 2023-04-06 13:00 (+8d) |  | 0.12d → 15.25d |
| 6 | 5. Разработка 3D графических элементов | 2023-03-09 09:00 → 2023-03-09 10:00 | 2023-03-22 18:00 → 2023-03-23 12:00 (+1d) |  | 0.12d → 15.25d |
| 7 | 6.Создание заставки | 2023-03-23 09:00 → 2023-03-23 12:00 | 2023-04-12 18:00 → 2023-04-20 17:00 (+8d) |  | 0.12d → 15.25d |
| 8 | 9.Анализ и построение структуры базы объектов | 2023-03-07 18:00 → 2023-03-09 10:00 (+2d) | 2023-03-13 18:00 → 2023-04-13 16:05 (+31d) | 2.2w → 2.49w | 22d → 20.36d |
| 9 | 13.Анализ и проектирование ядра | 2023-03-09 09:00 → 2023-03-23 11:18 (+14d) | 2023-03-29 18:00 → 2023-05-05 13:00 (+37d) | 3w → 5.89w | 10.12d → 5.62d |
| 10 | 14.Создание модели ядра | 2023-03-09 09:00 → 2023-03-09 10:00 | 2023-04-12 18:00 → 2023-05-10 11:00 (+28d) | 5w → 5.12w | 0.12d → 4.88d |
| 11 | 20. Разработка дизайна руководства | 2023-03-09 09:00 → 2023-04-06 14:00 (+28d) | 2023-03-15 18:00 → 2023-04-13 15:00 (+29d) |  | 20.12d → 20.5d |
| 12 | 23. Разработка структуры сайта | 2023-03-09 09:00 → 2023-03-09 10:00 | 2023-03-09 18:00 → 2023-03-10 10:00 (+1d) |  | 24.12d → 45d |
| 13 | 24. Разработка дизайна сайта | 2023-03-09 09:00 → 2023-03-10 10:00 (+1d) | 2023-03-15 18:00 → 2023-04-20 13:00 (+36d) | 1w → 2.98w | 20.12d → 15.62d |
| 14 | **Кодирование** | 2023-04-12 18:00 → 2023-05-10 11:00 (+28d) | 2023-08-01 18:00 → 2023-08-25 16:00 (+24d) | 75d → 76.5d | 0.12d → 4.88d |
| 15 | 7. Программирование интерфейса | 2023-06-28 09:00 → 2023-07-21 14:00 (+23d) | 2023-07-18 18:00 → 2023-08-11 13:00 (+24d) |  | 0.12d → 4.88d |
| 16 | 10.Программирование средств обработки базы объектов | 2023-04-12 18:00 → 2023-05-10 11:00 (+28d) | 2023-05-02 18:00 → 2023-05-29 11:00 (+27d) |  | 48.12d → 53.75d |
| 17 | 11.Наполнение базы объектов | 2023-05-02 18:00 → 2023-05-29 11:00 (+27d) | 2023-05-22 18:00 → 2023-06-18 11:00 (+27d) |  | 48.12d → 53.75d |
| 18 | 16.Создание рабочей версии ядра | 2023-04-13 09:00 → 2023-05-10 11:00 (+27d) | 2023-06-27 18:00 → 2023-07-21 13:00 (+24d) | 10w → 10.25w | 0.12d → 4.88d |
| 19 | 17.Создание мультимедиа-наполнения | 2023-04-13 09:00 → 2023-05-10 11:00 (+27d) | 2023-05-29 18:00 → 2023-06-22 18:00 (+24d) |  | 45.12d → 50.62d |
| 20 | 18. Создание справочной системы | 2023-07-19 09:00 → 2023-08-11 14:00 (+23d) | 2023-08-01 18:00 → 2023-08-25 16:00 (+24d) |  | 0.12d → 4.88d |
| 21 | 21. Написание руководства пользователя | 2023-04-13 09:00 → 2023-05-10 11:00 (+27d) | 2023-05-04 18:00 → 2023-05-31 15:00 (+27d) |  | 60.12d → 66d |
| 22 | 25. Наполнение сайта | 2023-04-13 09:00 → 2023-05-10 11:00 (+27d) | 2023-05-04 18:00 → 2023-05-31 15:00 (+27d) |  | 60.12d → 66d |
| 23 | **Тестирование** | 2023-08-02 09:00 → 2023-08-25 16:00 (+23d) | 2023-08-29 18:00 → 2023-09-29 16:00 (+31d) | 20d → 25d | 0.12d → 0d |
| 24 | 15.Тестирование модели ядра | 2023-08-02 09:00 → 2023-09-22 16:00 (+51d) | 2023-08-08 18:00 → 2023-09-29 16:00 (+52d) |  | 15.12d → 0d |
| 25 | 26. Тестирование сайта | 2023-08-02 09:00 → 2023-08-25 16:00 (+23d) | 2023-08-29 18:00 → 2023-09-22 17:00 (+24d) | 4w → 4.03w | 0.12d → 4.88d |
| 53 | 27.Сдача сайта в эксплуатацию | 2023-08-29 18:00 → 2023-09-29 16:00 (+31d) | 2023-08-29 18:00 → 2023-09-29 16:00 (+31d) |  | 0.12d → 0d |

## Version 6 (saved 2023-03-12, file lab5_real3_start_optimizing_crit.mpp)

Note of the change: finish 5

Last finish 2023-09-29 → 2023-08-28 (-32d).

Removed: 52 Совещание 27

Changed:

| ID | Task | Start | Finish | Duration | Total float | Other |
| --- | --- | --- | --- | --- | --- | --- |
| 3 | **Проектирование** |  | 2023-05-10 11:00 → 2023-05-05 13:00 (-5d) | 41.12d → 40.38d | 4.88d → 8.64d |  |
| 10 | 14.Создание модели ядра |  | 2023-05-10 11:00 → 2023-03-23 10:49 (-48d) | 5.12w → 2.02w | 4.88d → 38.91d | resources Ведущий программист; Программист №1 → Ведущий программист; Программист №1; Программист №2; Программист №3; программист №4 |
| 14 | **Кодирование** | 2023-05-10 11:00 → 2023-05-05 13:00 (-5d) | 2023-08-25 16:00 → 2023-07-28 15:08 (-28d) | 76.5d → 57.14d | 4.88d → 8.64d |  |
| 15 | 7. Программирование интерфейса | 2023-07-21 14:00 → 2023-07-04 12:08 (-17d) | 2023-08-11 13:00 → 2023-07-13 17:08 (-29d) | 3w → 1.5w | 4.88d → 8.64d | resources Программист №3; программист №4 → Программист №3; программист №4; Программист №1; Программист №2 |
| 16 | 10.Программирование средств обработки базы объектов | 2023-05-10 11:00 → 2023-05-05 13:00 (-5d) | 2023-05-29 11:00 → 2023-06-05 14:17 (+7d) | 5w → 7.5w | 53.75d → 32.75d | resources Программист №3; программист №4; Сервер → программист №4; Сервер |
| 17 | 11.Наполнение базы объектов | 2023-05-29 11:00 → 2023-06-05 14:17 (+7d) | 2023-06-18 11:00 → 2023-06-25 14:17 (+7d) |  | 53.75d → 32.75d |  |
| 18 | 16.Создание рабочей версии ядра | 2023-05-10 11:00 → 2023-05-05 14:00 (-5d) | 2023-07-21 13:00 → 2023-07-04 12:08 (-17d) | 10.25w → 7.78w | 4.88d → 8.64d | resources Ведущий программист; Программист №1; Программист №2 → Ведущий программист; Программист №1; Программист №2; Программист №3 |
| 19 | 17.Создание мультимедиа-наполнения | 2023-05-10 11:00 → 2023-05-05 14:00 (-5d) |  |  | 50.62d → 34.28d |  |
| 20 | 18. Создание справочной системы | 2023-08-11 14:00 → 2023-07-13 17:08 (-29d) | 2023-08-25 16:00 → 2023-07-28 15:08 (-28d) |  | 4.88d → 8.64d |  |
| 21 | 21. Написание руководства пользователя | 2023-05-10 11:00 → 2023-05-05 14:00 (-5d) | 2023-05-31 15:00 → 2023-05-31 12:00 |  | 66d → 49.91d |  |
| 22 | 25. Наполнение сайта | 2023-05-10 11:00 → 2023-05-05 14:00 (-5d) | 2023-05-31 15:00 → 2023-05-31 12:00 |  | 66d → 49.91d |  |
| 23 | **Тестирование** | 2023-08-25 16:00 → 2023-07-28 15:08 (-28d) | 2023-09-29 16:00 → 2023-08-28 17:08 (-32d) | 25d → 21.25d |  |  |
| 24 | 15.Тестирование модели ядра | 2023-09-22 16:00 → 2023-08-25 15:08 (-28d) | 2023-09-29 16:00 → 2023-08-28 17:08 (-32d) | 1w → 0.25w |  | resources Программист №1 → Программист №1; Программист №2; Программист №3; программист №4 |
| 25 | 26. Тестирование сайта | 2023-08-25 16:00 → 2023-07-28 15:08 (-28d) | 2023-09-22 17:00 → 2023-08-16 11:01 (-37d) | 4.03w → 2.5w | 4.88d → 8.64d | resources Ведущий программист; Программист №1; Программист №2 → Ведущий программист; Программист №1; Программист №2; Программист №3; программист №4 |
| 26 | **Совещание** |  | 2023-08-30 10:00 → 2023-08-23 10:00 (-7d) | 125.12d → 120.12d |  |  |
| 52 | 27.Сдача сайта в эксплуатацию | 2023-09-29 16:00 → 2023-08-28 17:08 (-32d) | 2023-09-29 16:00 → 2023-08-28 17:08 (-32d) |  |  |  |

## Version 7 (saved 2023-03-14, file 3_0_начало.mpp)

Note of the change: rk1_1

Last finish 2023-08-28 → 2023-07-26 (-33d).

Added:

| ID | Task | Duration | Start | Finish | Predecessors | Resources |
| --- | --- | --- | --- | --- | --- | --- |
| 2 | **Создание интерфейса** | 69.38d | 2023-03-01 09:00 | 2023-06-13 12:01 | 1 |  |
| 8 | **Построение базы объектов** | 80d | 2023-03-01 09:00 | 2023-06-27 18:00 |  | Сервер |
| 12 | **Создание ядра GIS** | 61.88d | 2023-03-01 09:00 | 2023-05-31 17:01 |  |  |
| 13 | Анализ и проектирование ядра | 3w | 2023-03-01 09:00 | 2023-03-22 18:00 |  | Ведущий программист; Системный аналитик |
| 14 | Создание модели ядра | 2.02w | 2023-03-23 09:00 | 2023-04-06 09:47 | 13 | Ведущий программист; Программист №1; Программист №2; Программист №3; программист №4 |
| 15 | Тестирование модели ядра | 1w | 2023-04-06 09:47 | 2023-04-13 09:47 | 14 | Программист №1 |
| 16 | Создание рабочей версии ядра | 6.36w | 2023-04-13 09:47 | 2023-05-31 17:01 | 15 | Ведущий программист; Программист №1; Программист №2; Программист №3; программист №4 |
| 17 | Создание мультимедиа-наполнения | 6w | 2023-04-06 09:00 | 2023-05-22 18:00 | 3 | Мультимедиа- корреспондент |
| 18 | Создание справочной системы | 2w | 2023-06-13 12:01 | 2023-06-27 12:01 | 7 | Технический писатель |
| 19 | **Создание руководства пользователя** | 17d | 2023-05-29 12:01 | 2023-06-22 12:01 | 7FS-10d |  |
| 20 | Разработка дизайна руководства | 1w | 2023-05-29 12:01 | 2023-06-05 12:01 |  | Художник- дизайнер |
| 21 | Написание руководства пользователя | 3w | 2023-05-31 12:01 | 2023-06-22 12:01 | 20SS+2d | Технический писатель |
| 22 | **Создание Web-сайта и поддержка** | 21d | 2023-05-31 12:01 | 2023-06-30 12:01 |  |  |
| 23 | Разработка структуры сайта | 1d | 2023-05-31 12:01 | 2023-06-01 12:01 | 21SS | Web-дизайнер |
| 24 | Разработка дизайна сайта | 1w | 2023-06-01 12:01 | 2023-06-08 12:01 | 23 | 3D аниматор; Web-дизайнер; Художник- дизайнер |
| 25 | Наполнение сайта | 3w | 2023-06-08 12:01 | 2023-06-30 12:01 | 24 | Web-дизайнер |

Removed: 2 Анализ требований; 3 Проектирование; 9 13.Анализ и проектирование ядра; 10 14.Создание модели ядра; 11 20. Разработка дизайна руководства; 12 23. Разработка структуры сайта; 13 24. Разработка дизайна сайта; 14 Кодирование; 18 16.Создание рабочей версии ядра; 19 17.Создание мультимедиа-наполнения; 20 18. Создание справочной системы; 21 21. Написание руководства пользователя; 22 25. Наполнение сайта; 23 Тестирование; 24 15.Тестирование модели ядра; 48 Совещание 23; 49 Совещание 24; 50 Совещание 25; 51 Совещание 26

Changed:

| ID | Task | Start | Finish | Duration | Total float | Predecessors | Other |
| --- | --- | --- | --- | --- | --- | --- | --- |
| 1 | Начало проекта |  |  |  |  |  | was named 1. Начало проекта; baseline start none → 2023-03-01 09:00; baseline finish none → 2023-03-01 09:00 |
| 3 | **Разработка дизайна интерфейса** | 2023-03-09 10:00 → 2023-03-01 09:00 (-8d) | 2023-04-20 17:00 → 2023-04-05 18:00 (-15d) | 30.75d → 25d | 18.26d → 45.12d |  | was named 3. Разработка дизайна интерфейса; baseline start none → 2023-03-01 10:00; baseline finish none → 2023-04-06 13:00 |
| 4 | Разработка 2D графических элементов | 2023-03-09 10:00 → 2023-03-01 09:00 (-8d) | 2023-04-06 13:00 → 2023-03-22 18:00 (-15d) |  | 18.26d → 45.12d |  | was named 4. Разработка 2D графических элементов; baseline start none → 2023-03-01 10:00; baseline finish none → 2023-03-23 11:00 |
| 5 | Разработка 3D графических элементов | 2023-03-09 10:00 → 2023-03-01 09:00 (-8d) | 2023-03-23 12:00 → 2023-03-15 18:00 (-8d) |  | 18.26d → 45.12d |  | was named 5. Разработка 3D графических элементов; baseline start none → 2023-03-01 10:00; baseline finish none → 2023-03-16 10:00 |
| 6 | Создание заставки | 2023-03-23 12:00 → 2023-03-16 09:00 (-7d) | 2023-04-20 17:00 → 2023-04-05 18:00 (-15d) |  | 18.26d → 45.12d |  | was named 6.Создание заставки; baseline start none → 2023-03-16 11:00; baseline finish none → 2023-04-06 13:00 |
| 7 | Программирование интерфейса | 2023-07-04 12:08 → 2023-05-31 17:01 (-34d) | 2023-07-13 17:08 → 2023-06-13 12:01 (-30d) |  | 8.64d → 10.61d | 16.Создание рабочей версии ядра → 3, 12 | was named 7. Программирование интерфейса; baseline start none → 2023-06-08 11:14; baseline finish none → 2023-06-20 16:14 |
| 9 | Анализ и построение структуры базы объектов | 2023-03-09 10:00 → 2023-03-01 09:00 (-8d) | 2023-04-13 16:05 → 2023-03-15 18:00 (-29d) | 2.49w → 2w | 23.38d → 20.12d |  | was named 9.Анализ и построение структуры базы объектов; resources Системный аналитик; Сервер → Системный аналитик; baseline start none → 2023-03-23 12:00; baseline finish none → 2023-04-06 13:00 |
| 10 | Программирование средств обработки базы объектов | 2023-05-05 13:00 → 2023-03-16 09:00 (-50d) | 2023-06-05 14:17 → 2023-03-29 18:00 (-68d) | 7.5w → 2w | 32.75d → 20.12d | none → 9 | was named 10.Программирование средств обработки базы объектов; resources программист №4; Сервер → Программист №3; программист №4; Программист №2; baseline start none → 2023-04-06 14:00; baseline finish none → 2023-04-20 13:00 |
| 11 | Наполнение базы объектов | 2023-06-05 14:17 → 2023-03-30 09:00 (-67d) | 2023-06-25 14:17 → 2023-06-27 18:00 (+2d) |  | 32.75d → 20.12d |  | was named 11.Наполнение базы объектов; resources Наборщик данных №1; Наборщик данных №2; Наборщик данных №3; Наборщик данных №4; Наборщик данных №5; Сервер → Наборщик данных №1; Наборщик данных №2; Наборщик данных №3; Наборщик данных №4; Наборщик данных №5; baseline start none → 2023-04-20 14:00; baseline finish none → 2023-07-19 13:00 |
| 26 | **Совещание** |  | 2023-08-23 10:00 → 2023-07-26 10:00 (-28d) | 120.12d → 100.12d |  |  | baseline start none → 2023-03-01 09:00; baseline finish none → 2023-07-26 10:00 |
| 27 | Совещание 1 |  |  |  |  |  | baseline start none → 2023-03-01 09:00; baseline finish none → 2023-03-01 10:00 |
| 28 | Совещание 3 |  |  |  |  |  | baseline start none → 2023-03-15 09:00; baseline finish none → 2023-03-15 10:00 |
| 29 | Совещание 4 |  |  |  |  |  | baseline start none → 2023-03-22 09:00; baseline finish none → 2023-03-22 10:00 |
| 30 | Совещание 5 |  |  |  |  |  | baseline start none → 2023-03-29 09:00; baseline finish none → 2023-03-29 10:00 |
| 31 | Совещание 6 |  |  |  |  |  | baseline start none → 2023-04-05 09:00; baseline finish none → 2023-04-05 10:00 |
| 32 | Совещание 7 |  |  |  |  |  | baseline start none → 2023-04-12 09:00; baseline finish none → 2023-04-12 10:00 |
| 33 | Совещание 8 |  |  |  |  |  | baseline start none → 2023-04-19 09:00; baseline finish none → 2023-04-19 10:00 |
| 34 | Совещание 9 |  |  |  |  |  | baseline start none → 2023-04-26 09:00; baseline finish none → 2023-04-26 10:00 |
| 35 | Совещание 10 |  |  |  |  |  | baseline start none → 2023-05-03 09:00; baseline finish none → 2023-05-03 10:00 |
| 36 | Совещание 11 |  |  |  |  |  | baseline start none → 2023-05-10 09:00; baseline finish none → 2023-05-10 10:00 |
| 37 | Совещание 12 |  |  |  |  |  | baseline start none → 2023-05-17 09:00; baseline finish none → 2023-05-17 10:00 |
| 38 | Совещание 13 |  |  |  |  |  | baseline start none → 2023-05-24 09:00; baseline finish none → 2023-05-24 10:00 |
| 39 | Совещание 14 |  |  |  |  |  | baseline start none → 2023-05-31 09:00; baseline finish none → 2023-05-31 10:00 |
| 40 | Совещание 15 |  |  |  |  |  | baseline start none → 2023-06-07 09:00; baseline finish none → 2023-06-07 10:00 |
| 41 | Совещание 16 |  |  |  |  |  | baseline start none → 2023-06-14 09:00; baseline finish none → 2023-06-14 10:00 |
| 42 | Совещание 17 |  |  |  |  |  | baseline start none → 2023-06-21 09:00; baseline finish none → 2023-06-21 10:00 |
| 43 | Совещание 18 |  |  |  |  |  | baseline start none → 2023-06-28 09:00; baseline finish none → 2023-06-28 10:00 |
| 44 | Совещание 19 |  |  |  |  |  | baseline start none → 2023-07-05 09:00; baseline finish none → 2023-07-05 10:00 |
| 45 | Совещание 20 |  |  |  |  |  | baseline start none → 2023-07-12 09:00; baseline finish none → 2023-07-12 10:00 |
| 46 | Совещание 21 |  |  |  |  |  | baseline start none → 2023-07-19 09:00; baseline finish none → 2023-07-19 10:00 |
| 47 | Совещание 22 |  |  |  |  |  | baseline start none → 2023-07-26 09:00; baseline finish none → 2023-07-26 10:00 |
| 48 | Тестирование сайта | 2023-07-28 15:08 → 2023-06-23 12:01 (-35d) | 2023-08-16 11:01 → 2023-07-11 14:05 (-36d) | 2.5w → 2.43w | 8.64d → 10.61d | none → 22FS-1w | was named 26. Тестирование сайта; baseline start none → 2023-07-05 11:14; baseline finish none → 2023-07-21 12:18 |
| 49 | Сдача сайта в эксплуатацию | 2023-08-28 17:08 → 2023-07-11 14:05 (-48d) | 2023-08-28 17:08 → 2023-07-11 14:05 (-48d) |  | 0d → 10.61d | Тестирование → 48 | was named 27.Сдача сайта в эксплуатацию; baseline start none → 2023-07-21 12:18; baseline finish none → 2023-07-21 12:18 |

## Version 8 (saved 2023-03-14, file 3_1_декомп.mpp)

Note of the change: rk1_1

Last finish 2023-07-26 → 2023-08-30 (+35d).

Added:

| ID | Task | Duration | Start | Finish | Predecessors | Constraint | Resources |
| --- | --- | --- | --- | --- | --- | --- | --- |
| 2 | Анализ требований | 1w | 2023-03-01 09:00 | 2023-03-07 18:00 | 1 |  | 3D аниматор; Web-дизайнер; Ведущий программист; Мультимедиа- корреспондент; Системный аналитик; Технический писатель; Художник- дизайнер |
| 3 | **Проектирование** | 25d | 2023-03-07 18:00 | 2023-04-12 18:00 | 2 |  |  |
| 9 | 13.Анализ и проектирование ядра | 3w | 2023-03-09 09:00 | 2023-03-29 18:00 |  |  | Ведущий программист; Системный аналитик |
| 10 | 14.Создание модели ядра | 5w | 2023-03-09 09:00 | 2023-04-12 18:00 |  |  | Ведущий программист; Программист №1 |
| 11 | 20. Разработка дизайна руководства | 1w | 2023-03-09 09:00 | 2023-03-15 18:00 |  |  | Художник- дизайнер |
| 12 | 23. Разработка структуры сайта | 1d | 2023-03-09 09:00 | 2023-03-09 18:00 |  |  | Web-дизайнер |
| 13 | 24. Разработка дизайна сайта | 1w | 2023-03-09 09:00 | 2023-03-15 18:00 |  |  | 3D аниматор; Web-дизайнер; Художник- дизайнер |
| 14 | **Кодирование** | 75d | 2023-04-12 18:00 | 2023-08-01 18:00 | 3 |  |  |
| 18 | 16.Создание рабочей версии ядра | 10w | 2023-04-13 09:00 | 2023-06-27 18:00 |  |  | Ведущий программист; Программист №1; Программист №2 |
| 19 | 17.Создание мультимедиа-наполнения | 6w | 2023-04-13 09:00 | 2023-05-29 18:00 |  |  | Мультимедиа- корреспондент |
| 20 | 18. Создание справочной системы | 2w | 2023-07-19 09:00 | 2023-08-01 18:00 | 15 |  | Технический писатель |
| 21 | 21. Написание руководства пользователя | 3w | 2023-04-13 09:00 | 2023-05-04 18:00 |  |  | Технический писатель |
| 22 | 25. Наполнение сайта | 3w | 2023-04-13 09:00 | 2023-05-04 18:00 |  |  | Web-дизайнер |
| 23 | **Тестирование** | 20d | 2023-08-02 09:00 | 2023-08-29 18:00 | 14 |  |  |
| 24 | 15.Тестирование модели ядра | 1w | 2023-08-02 09:00 | 2023-08-08 18:00 |  |  | Программист №1 |
| 48 | Совещание 23 | 1h | 2023-08-02 09:00 | 2023-08-02 10:00 |  | start no earlier than 2023-08-02 09:00 | 3D аниматор; Web-дизайнер; Ведущий программист; Мультимедиа- корреспондент; Системный аналитик; Технический писатель; Художник- дизайнер |
| 49 | Совещание 24 | 1h | 2023-08-09 09:00 | 2023-08-09 10:00 |  | start no earlier than 2023-08-09 09:00 | 3D аниматор; Web-дизайнер; Ведущий программист; Мультимедиа- корреспондент; Системный аналитик; Технический писатель; Художник- дизайнер |
| 50 | Совещание 25 | 1h | 2023-08-16 09:00 | 2023-08-16 10:00 |  | start no earlier than 2023-08-16 09:00 | 3D аниматор; Web-дизайнер; Ведущий программист; Мультимедиа- корреспондент; Системный аналитик; Технический писатель; Художник- дизайнер |
| 51 | Совещание 26 | 1h | 2023-08-23 09:00 | 2023-08-23 10:00 |  | start no earlier than 2023-08-23 09:00 | 3D аниматор; Web-дизайнер; Ведущий программист; Мультимедиа- корреспондент; Системный аналитик; Технический писатель; Художник- дизайнер |
| 52 | Совещание 27 | 1h | 2023-08-30 09:00 | 2023-08-30 10:00 |  | start no earlier than 2023-08-30 09:00 | 3D аниматор; Web-дизайнер; Ведущий программист; Мультимедиа- корреспондент; Системный аналитик; Технический писатель; Художник- дизайнер |

Removed: 2 Создание интерфейса; 8 Построение базы объектов; 12 Создание ядра GIS; 13 Анализ и проектирование ядра; 14 Создание модели ядра; 15 Тестирование модели ядра; 16 Создание рабочей версии ядра; 17 Создание мультимедиа-наполнения; 18 Создание справочной системы; 19 Создание руководства пользователя; 20 Разработка дизайна руководства; 21 Написание руководства пользователя; 22 Создание Web-сайта и поддержка; 23 Разработка структуры сайта; 24 Разработка дизайна сайта; 25 Наполнение сайта

Changed:

| ID | Task | Start | Finish | Duration | Total float | Predecessors | Other |
| --- | --- | --- | --- | --- | --- | --- | --- |
| 1 | 1. Начало проекта |  |  |  |  |  | was named Начало проекта; baseline start 2023-03-01 09:00 → none; baseline finish 2023-03-01 09:00 → none |
| 4 | **3. Разработка дизайна интерфейса** | 2023-03-01 09:00 → 2023-03-09 09:00 (+8d) | 2023-04-05 18:00 → 2023-04-12 18:00 (+7d) |  | 45.12d → 0.12d |  | was named Разработка дизайна интерфейса; baseline start 2023-03-01 10:00 → none; baseline finish 2023-04-06 13:00 → none |
| 5 | 4. Разработка 2D графических элементов | 2023-03-01 09:00 → 2023-03-09 09:00 (+8d) | 2023-03-22 18:00 → 2023-03-29 18:00 (+7d) |  | 45.12d → 0.12d |  | was named Разработка 2D графических элементов; baseline start 2023-03-01 10:00 → none; baseline finish 2023-03-23 11:00 → none |
| 6 | 5. Разработка 3D графических элементов | 2023-03-01 09:00 → 2023-03-09 09:00 (+8d) | 2023-03-15 18:00 → 2023-03-22 18:00 (+7d) |  | 45.12d → 0.12d |  | was named Разработка 3D графических элементов; baseline start 2023-03-01 10:00 → none; baseline finish 2023-03-16 10:00 → none |
| 7 | 6.Создание заставки | 2023-03-16 09:00 → 2023-03-23 09:00 (+7d) | 2023-04-05 18:00 → 2023-04-12 18:00 (+7d) |  | 45.12d → 0.12d |  | was named Создание заставки; baseline start 2023-03-16 11:00 → none; baseline finish 2023-04-06 13:00 → none |
| 8 | 9.Анализ и построение структуры базы объектов | 2023-03-01 09:00 → 2023-03-07 18:00 (+6d) | 2023-03-15 18:00 → 2023-03-13 18:00 (-2d) | 2w → 2.2w | 20.12d → 22d |  | was named Анализ и построение структуры базы объектов; resources Системный аналитик → Системный аналитик; Сервер; baseline start 2023-03-23 12:00 → none; baseline finish 2023-04-06 13:00 → none |
| 15 | 7. Программирование интерфейса | 2023-05-31 17:01 → 2023-06-28 09:00 (+28d) | 2023-06-13 12:01 → 2023-07-18 18:00 (+35d) | 1.5w → 3w | 10.61d → 0.12d | 4, Создание ядра GIS → 18 | was named Программирование интерфейса; resources Программист №3; программист №4; Программист №1; Программист №2 → Программист №3; программист №4; baseline start 2023-06-08 11:14 → none; baseline finish 2023-06-20 16:14 → none |
| 16 | 10.Программирование средств обработки базы объектов | 2023-03-16 09:00 → 2023-04-12 18:00 (+27d) | 2023-03-29 18:00 → 2023-05-02 18:00 (+34d) | 2w → 5w | 20.12d → 48.12d | 8 → none | was named Программирование средств обработки базы объектов; resources Программист №3; программист №4; Программист №2 → Программист №3; программист №4; Сервер; baseline start 2023-04-06 14:00 → none; baseline finish 2023-04-20 13:00 → none |
| 17 | 11.Наполнение базы объектов | 2023-03-30 09:00 → 2023-05-02 18:00 (+33d) | 2023-06-27 18:00 → 2023-05-22 18:00 (-36d) |  | 20.12d → 48.12d |  | was named Наполнение базы объектов; resources Наборщик данных №1; Наборщик данных №2; Наборщик данных №3; Наборщик данных №4; Наборщик данных №5 → Наборщик данных №1; Наборщик данных №2; Наборщик данных №3; Наборщик данных №4; Наборщик данных №5; Сервер; baseline start 2023-04-20 14:00 → none; baseline finish 2023-07-19 13:00 → none |
| 25 | 26. Тестирование сайта | 2023-06-23 12:01 → 2023-08-02 09:00 (+40d) | 2023-07-11 14:05 → 2023-08-29 18:00 (+49d) | 2.43w → 4w | 10.61d → 0.12d | Создание Web-сайта и поддержкаFS-1w → none | was named Тестирование сайта; resources Ведущий программист; Программист №1; Программист №2; Программист №3; программист №4 → Ведущий программист; Программист №1; Программист №2; baseline start 2023-07-05 11:14 → none; baseline finish 2023-07-21 12:18 → none |
| 26 | **Совещание** |  | 2023-07-26 10:00 → 2023-08-30 10:00 (+35d) | 100.12d → 125.12d |  |  | baseline start 2023-03-01 09:00 → none; baseline finish 2023-07-26 10:00 → none |
| 27 | Совещание 1 |  |  |  |  |  | baseline start 2023-03-01 09:00 → none; baseline finish 2023-03-01 10:00 → none |
| 28 | Совещание 3 |  |  |  |  |  | baseline start 2023-03-15 09:00 → none; baseline finish 2023-03-15 10:00 → none |
| 29 | Совещание 4 |  |  |  |  |  | baseline start 2023-03-22 09:00 → none; baseline finish 2023-03-22 10:00 → none |
| 30 | Совещание 5 |  |  |  |  |  | baseline start 2023-03-29 09:00 → none; baseline finish 2023-03-29 10:00 → none |
| 31 | Совещание 6 |  |  |  |  |  | baseline start 2023-04-05 09:00 → none; baseline finish 2023-04-05 10:00 → none |
| 32 | Совещание 7 |  |  |  |  |  | baseline start 2023-04-12 09:00 → none; baseline finish 2023-04-12 10:00 → none |
| 33 | Совещание 8 |  |  |  |  |  | baseline start 2023-04-19 09:00 → none; baseline finish 2023-04-19 10:00 → none |
| 34 | Совещание 9 |  |  |  |  |  | baseline start 2023-04-26 09:00 → none; baseline finish 2023-04-26 10:00 → none |
| 35 | Совещание 10 |  |  |  |  |  | baseline start 2023-05-03 09:00 → none; baseline finish 2023-05-03 10:00 → none |
| 36 | Совещание 11 |  |  |  |  |  | baseline start 2023-05-10 09:00 → none; baseline finish 2023-05-10 10:00 → none |
| 37 | Совещание 12 |  |  |  |  |  | baseline start 2023-05-17 09:00 → none; baseline finish 2023-05-17 10:00 → none |
| 38 | Совещание 13 |  |  |  |  |  | baseline start 2023-05-24 09:00 → none; baseline finish 2023-05-24 10:00 → none |
| 39 | Совещание 14 |  |  |  |  |  | baseline start 2023-05-31 09:00 → none; baseline finish 2023-05-31 10:00 → none |
| 40 | Совещание 15 |  |  |  |  |  | baseline start 2023-06-07 09:00 → none; baseline finish 2023-06-07 10:00 → none |
| 41 | Совещание 16 |  |  |  |  |  | baseline start 2023-06-14 09:00 → none; baseline finish 2023-06-14 10:00 → none |
| 42 | Совещание 17 |  |  |  |  |  | baseline start 2023-06-21 09:00 → none; baseline finish 2023-06-21 10:00 → none |
| 43 | Совещание 18 |  |  |  |  |  | baseline start 2023-06-28 09:00 → none; baseline finish 2023-06-28 10:00 → none |
| 44 | Совещание 19 |  |  |  |  |  | baseline start 2023-07-05 09:00 → none; baseline finish 2023-07-05 10:00 → none |
| 45 | Совещание 20 |  |  |  |  |  | baseline start 2023-07-12 09:00 → none; baseline finish 2023-07-12 10:00 → none |
| 46 | Совещание 21 |  |  |  |  |  | baseline start 2023-07-19 09:00 → none; baseline finish 2023-07-19 10:00 → none |
| 47 | Совещание 22 |  |  |  |  |  | baseline start 2023-07-26 09:00 → none; baseline finish 2023-07-26 10:00 → none |
| 53 | 27.Сдача сайта в эксплуатацию | 2023-07-11 14:05 → 2023-08-29 18:00 (+49d) | 2023-07-11 14:05 → 2023-08-29 18:00 (+49d) |  | 10.61d → 0.12d | 25 → 23 | was named Сдача сайта в эксплуатацию; baseline start 2023-07-21 12:18 → none; baseline finish 2023-07-21 12:18 → none |

## Version 9 (saved 2023-03-14, file 3_2_декомп_авт_вырав.mpp)

Note of the change: rk1_1

Last finish 2023-08-30 → 2023-09-29 (+30d).

Changed:

| ID | Task | Start | Finish | Duration | Total float |
| --- | --- | --- | --- | --- | --- |
| 2 | Анализ требований | 2023-03-01 09:00 → 2023-03-01 10:00 | 2023-03-07 18:00 → 2023-03-09 10:00 (+2d) |  | 0.12d → 4.88d |
| 3 | **Проектирование** | 2023-03-07 18:00 → 2023-03-09 10:00 (+2d) | 2023-04-12 18:00 → 2023-05-10 11:00 (+28d) | 25d → 41.12d | 0.12d → 4.88d |
| 4 | **3. Разработка дизайна интерфейса** | 2023-03-09 09:00 → 2023-03-09 10:00 | 2023-04-12 18:00 → 2023-04-20 17:00 (+8d) | 25d → 30.75d | 0.12d → 15.25d |
| 5 | 4. Разработка 2D графических элементов | 2023-03-09 09:00 → 2023-03-09 10:00 | 2023-03-29 18:00 → 2023-04-06 13:00 (+8d) |  | 0.12d → 15.25d |
| 6 | 5. Разработка 3D графических элементов | 2023-03-09 09:00 → 2023-03-09 10:00 | 2023-03-22 18:00 → 2023-03-23 12:00 (+1d) |  | 0.12d → 15.25d |
| 7 | 6.Создание заставки | 2023-03-23 09:00 → 2023-03-23 12:00 | 2023-04-12 18:00 → 2023-04-20 17:00 (+8d) |  | 0.12d → 15.25d |
| 8 | 9.Анализ и построение структуры базы объектов | 2023-03-07 18:00 → 2023-03-09 10:00 (+2d) | 2023-03-13 18:00 → 2023-04-13 16:05 (+31d) | 2.2w → 2.49w | 22d → 20.36d |
| 9 | 13.Анализ и проектирование ядра | 2023-03-09 09:00 → 2023-03-23 11:18 (+14d) | 2023-03-29 18:00 → 2023-05-05 13:00 (+37d) | 3w → 5.89w | 10.12d → 5.62d |
| 10 | 14.Создание модели ядра | 2023-03-09 09:00 → 2023-03-09 10:00 | 2023-04-12 18:00 → 2023-05-10 11:00 (+28d) | 5w → 5.12w | 0.12d → 4.88d |
| 11 | 20. Разработка дизайна руководства | 2023-03-09 09:00 → 2023-04-06 14:00 (+28d) | 2023-03-15 18:00 → 2023-04-13 15:00 (+29d) |  | 20.12d → 20.5d |
| 12 | 23. Разработка структуры сайта | 2023-03-09 09:00 → 2023-03-09 10:00 | 2023-03-09 18:00 → 2023-03-10 10:00 (+1d) |  | 24.12d → 45d |
| 13 | 24. Разработка дизайна сайта | 2023-03-09 09:00 → 2023-03-10 10:00 (+1d) | 2023-03-15 18:00 → 2023-04-20 13:00 (+36d) | 1w → 2.98w | 20.12d → 15.62d |
| 14 | **Кодирование** | 2023-04-12 18:00 → 2023-05-10 11:00 (+28d) | 2023-08-01 18:00 → 2023-08-25 16:00 (+24d) | 75d → 76.5d | 0.12d → 4.88d |
| 15 | 7. Программирование интерфейса | 2023-06-28 09:00 → 2023-07-21 14:00 (+23d) | 2023-07-18 18:00 → 2023-08-11 13:00 (+24d) |  | 0.12d → 4.88d |
| 16 | 10.Программирование средств обработки базы объектов | 2023-04-12 18:00 → 2023-05-10 11:00 (+28d) | 2023-05-02 18:00 → 2023-05-29 11:00 (+27d) |  | 48.12d → 53.75d |
| 17 | 11.Наполнение базы объектов | 2023-05-02 18:00 → 2023-05-29 11:00 (+27d) | 2023-05-22 18:00 → 2023-06-18 11:00 (+27d) |  | 48.12d → 53.75d |
| 18 | 16.Создание рабочей версии ядра | 2023-04-13 09:00 → 2023-05-10 11:00 (+27d) | 2023-06-27 18:00 → 2023-07-21 13:00 (+24d) | 10w → 10.25w | 0.12d → 4.88d |
| 19 | 17.Создание мультимедиа-наполнения | 2023-04-13 09:00 → 2023-05-10 11:00 (+27d) | 2023-05-29 18:00 → 2023-06-22 18:00 (+24d) |  | 45.12d → 50.62d |
| 20 | 18. Создание справочной системы | 2023-07-19 09:00 → 2023-08-11 14:00 (+23d) | 2023-08-01 18:00 → 2023-08-25 16:00 (+24d) |  | 0.12d → 4.88d |
| 21 | 21. Написание руководства пользователя | 2023-04-13 09:00 → 2023-05-10 11:00 (+27d) | 2023-05-04 18:00 → 2023-05-31 15:00 (+27d) |  | 60.12d → 66d |
| 22 | 25. Наполнение сайта | 2023-04-13 09:00 → 2023-05-10 11:00 (+27d) | 2023-05-04 18:00 → 2023-05-31 15:00 (+27d) |  | 60.12d → 66d |
| 23 | **Тестирование** | 2023-08-02 09:00 → 2023-08-25 16:00 (+23d) | 2023-08-29 18:00 → 2023-09-29 16:00 (+31d) | 20d → 25d | 0.12d → 0d |
| 24 | 15.Тестирование модели ядра | 2023-08-02 09:00 → 2023-09-22 16:00 (+51d) | 2023-08-08 18:00 → 2023-09-29 16:00 (+52d) |  | 15.12d → 0d |
| 25 | 26. Тестирование сайта | 2023-08-02 09:00 → 2023-08-25 16:00 (+23d) | 2023-08-29 18:00 → 2023-09-22 17:00 (+24d) | 4w → 4.03w | 0.12d → 4.88d |
| 53 | 27.Сдача сайта в эксплуатацию | 2023-08-29 18:00 → 2023-09-29 16:00 (+31d) | 2023-08-29 18:00 → 2023-09-29 16:00 (+31d) |  | 0.12d → 0d |

## Version 10 (saved 2023-03-14, file 3_3_декомп_авт_вырав_руч_оптимиз.mpp)

Note of the change: rk1_1

Last finish 2023-09-29 → 2023-08-28 (-32d).

Removed: 52 Совещание 27

Changed:

| ID | Task | Start | Finish | Duration | Total float | Other |
| --- | --- | --- | --- | --- | --- | --- |
| 3 | **Проектирование** |  | 2023-05-10 11:00 → 2023-05-05 13:00 (-5d) | 41.12d → 40.38d | 4.88d → 8.64d |  |
| 10 | 14.Создание модели ядра |  | 2023-05-10 11:00 → 2023-03-23 10:49 (-48d) | 5.12w → 2.02w | 4.88d → 38.91d | resources Ведущий программист; Программист №1 → Ведущий программист; Программист №1; Программист №2; Программист №3; программист №4 |
| 14 | **Кодирование** | 2023-05-10 11:00 → 2023-05-05 13:00 (-5d) | 2023-08-25 16:00 → 2023-07-28 15:08 (-28d) | 76.5d → 57.14d | 4.88d → 8.64d |  |
| 15 | 7. Программирование интерфейса | 2023-07-21 14:00 → 2023-07-04 12:08 (-17d) | 2023-08-11 13:00 → 2023-07-13 17:08 (-29d) | 3w → 1.5w | 4.88d → 8.64d | resources Программист №3; программист №4 → Программист №3; программист №4; Программист №1; Программист №2 |
| 16 | 10.Программирование средств обработки базы объектов | 2023-05-10 11:00 → 2023-05-05 13:00 (-5d) | 2023-05-29 11:00 → 2023-06-05 14:17 (+7d) | 5w → 7.5w | 53.75d → 32.75d | resources Программист №3; программист №4; Сервер → программист №4; Сервер |
| 17 | 11.Наполнение базы объектов | 2023-05-29 11:00 → 2023-06-05 14:17 (+7d) | 2023-06-18 11:00 → 2023-06-25 14:17 (+7d) |  | 53.75d → 32.75d |  |
| 18 | 16.Создание рабочей версии ядра | 2023-05-10 11:00 → 2023-05-05 14:00 (-5d) | 2023-07-21 13:00 → 2023-07-04 12:08 (-17d) | 10.25w → 7.78w | 4.88d → 8.64d | resources Ведущий программист; Программист №1; Программист №2 → Ведущий программист; Программист №1; Программист №2; Программист №3 |
| 19 | 17.Создание мультимедиа-наполнения | 2023-05-10 11:00 → 2023-05-05 14:00 (-5d) |  |  | 50.62d → 34.28d |  |
| 20 | 18. Создание справочной системы | 2023-08-11 14:00 → 2023-07-13 17:08 (-29d) | 2023-08-25 16:00 → 2023-07-28 15:08 (-28d) |  | 4.88d → 8.64d |  |
| 21 | 21. Написание руководства пользователя | 2023-05-10 11:00 → 2023-05-05 14:00 (-5d) | 2023-05-31 15:00 → 2023-05-31 12:00 |  | 66d → 49.91d |  |
| 22 | 25. Наполнение сайта | 2023-05-10 11:00 → 2023-05-05 14:00 (-5d) | 2023-05-31 15:00 → 2023-05-31 12:00 |  | 66d → 49.91d |  |
| 23 | **Тестирование** | 2023-08-25 16:00 → 2023-07-28 15:08 (-28d) | 2023-09-29 16:00 → 2023-08-28 17:08 (-32d) | 25d → 21.25d |  |  |
| 24 | 15.Тестирование модели ядра | 2023-09-22 16:00 → 2023-08-25 15:08 (-28d) | 2023-09-29 16:00 → 2023-08-28 17:08 (-32d) | 1w → 0.25w |  | resources Программист №1 → Программист №1; Программист №2; Программист №3; программист №4 |
| 25 | 26. Тестирование сайта | 2023-08-25 16:00 → 2023-07-28 15:08 (-28d) | 2023-09-22 17:00 → 2023-08-16 11:01 (-37d) | 4.03w → 2.5w | 4.88d → 8.64d | resources Ведущий программист; Программист №1; Программист №2 → Ведущий программист; Программист №1; Программист №2; Программист №3; программист №4 |
| 26 | **Совещание** |  | 2023-08-30 10:00 → 2023-08-23 10:00 (-7d) | 125.12d → 120.12d |  |  |
| 52 | 27.Сдача сайта в эксплуатацию | 2023-09-29 16:00 → 2023-08-28 17:08 (-32d) | 2023-09-29 16:00 → 2023-08-28 17:08 (-32d) |  |  |  |
